# 信息化项目组项目管理表

Schedule from MS Project, 2026-06-01 to 2028-01-31, 11 hours a day.

## Calendars

- 标准: Mon-Fri 08:00-12:00, 13:00-17:00; Sat-Sun off.

## Resources

| Resource |
| --- |
| 信息化项目组 |
| PLM工作组 |
| MES工作组 |
| ERP·OA工作组 |
| 基础设施工作组 |
| MDM工作组 |

## Schedule

| ID | WBS | Task | Type | Duration | Start | Finish | Predecessors | Resources | Work |
| --- | --- | --- | --- | --- | --- | --- | --- | --- | --- |
| 1 | 1 | 项目启动与总体蓝图 | manual | 75.64d | 2026-06-01 | 2026-10-22 |  | 信息化项目组 | 832h |
| 2 | 1.1 | 项目启动会准备 | manual | 3.64d | 2026-06-01 | 2026-06-05 |  | 信息化项目组 | 40h |
| 3 | 1.2 | 项目启动会召开 | milestone, manual | 0d | 2026-06-08 | 2026-06-08 | 2 | 信息化项目组 |  |
| 4 | 1.3 | 项目治理机制建立 | manual | 3.64d | 2026-06-09 | 2026-06-15 | 3 | 信息化项目组 | 40h |
| 5 | 1.4 | 现状调研计划编制 | manual | 3.64d | 2026-06-16 | 2026-06-22 | 4 | 信息化项目组 | 40h |
| 6 | 1.5 | 业务现状调研-数据与主数据 | manual | 5.82d | 2026-06-23 | 2026-07-02 | 5 | 信息化项目组 | 64h |
| 7 | 1.6 | 业务现状调研-PLM | manual | 5.82d | 2026-07-03 | 2026-07-14 | 6 | 信息化项目组 | 64h |
| 8 | 1.7 | 业务现状调研-MES/QMS | manual | 7.27d | 2026-07-15 | 2026-07-28 | 7 | 信息化项目组 | 80h |
| 9 | 1.8 | 业务现状调研-ERP/OA | manual | 5.82d | 2026-07-29 | 2026-08-07 | 8 | 信息化项目组 | 64h |
| 10 | 1.9 | 基础设施与网络现状调研 | manual | 5.82d | 2026-08-10 | 2026-08-19 | 9 | 信息化项目组 | 64h |
| 11 | 1.10 | 总体蓝图初稿编制 | manual | 10.91d | 2026-08-20 | 2026-09-09 | 10 | 信息化项目组 | 120h |
| 12 | 1.11 | 业务流程梳理与主映射关系整理 | manual | 10.91d | 2026-09-10 | 2026-09-30 | 11 | 信息化项目组 | 120h |
| 13 | 1.12 | 总体系统架构设计 | manual | 7.27d | 2026-10-01 | 2026-10-14 | 12 | 信息化项目组 | 80h |
| 14 | 1.13 | 总体实施计划评审准备 | manual | 3.64d | 2026-10-15 | 2026-10-21 | 13 | 信息化项目组 | 40h |
| 15 | 1.14 | 总体蓝图评审通过 | milestone, manual | 0d | 2026-10-22 | 2026-10-22 | 14 | 信息化项目组 |  |
| 16 | 2 | 招采合同与供应商管理 | manual | 301.09d | 2026-07-01 | 2028-01-31 |  | 信息化项目组 | 3312h |
| 17 | 2.1 | 核心系统招采关键路径 | manual | 80d | 2026-06-15 | 2026-11-13 |  | 信息化项目组 | 880h |
| 18 | 2.1.1 | 核心系统采购包边界冻结 | milestone, manual | 0d | 2026-06-19 | 2026-06-19 |  | 信息化项目组 |  |
| 19 | 2.1.2 | PLM供应商合同签订与进场完成 | milestone, manual | 0d | 2026-10-16 | 2026-10-16 | 18 | PLM工作组 |  |
| 20 | 2.1.3 | MES/QMS供应商合同签订与进场完成 | milestone, manual | 0d | 2026-10-30 | 2026-10-30 | 18 | MES工作组 |  |
| 21 | 2.1.4 | ERP扩容订单/合同确认完成 | milestone, manual | 0d | 2026-09-25 | 2026-09-25 | 18 | ERP·OA工作组 |  |
| 22 | 2.1.5 | OA供应商合同签订与进场完成 | milestone, manual | 0d | 2026-10-30 | 2026-10-30 | 18 | ERP·OA工作组 |  |
| 23 | 2.1.6 | 核心系统供应商联合启动会 | manual | 2.18d | 2026-11-02 | 2026-11-04 | 19, 20, 21, 22 | 信息化项目组 | 24h |
| 24 | 2.1.7 | 核心招采满足WBS9联调准备条件 | milestone, manual | 0d | 2026-11-13 | 2026-11-13 | 23 | 信息化项目组 |  |
| 25 | 2.2 | 基础设施与底座招采关键路径 | manual | 106.18d | 2026-07-01 | 2027-01-20 |  | 基础设施工作组 | 1168h |
| 26 | 2.3 | 外围应用与深化类招采长尾 | manual | 56.73d | 2027-05-03 | 2027-08-18 |  | 信息化项目组 | 624h |
| 27 | 2.3.1 | 驾驶舱深化类采购准备 | manual | 7.27d | 2027-05-03 | 2027-05-14 |  | 信息化项目组 | 80h |
| 28 | 2.3.2 | AI应用深化类采购准备 | manual | 7.27d | 2027-05-17 | 2027-05-28 | 27 | 信息化项目组 | 80h |
| 29 | 2.3.3 | 后续优化与扩展类采购 | manual | 16d | 2027-06-01 | 2027-06-30 | 28 | 信息化项目组 | 176h |
| 30 | 2.3.4 | 外围招采合同审批与进场 | manual | 16d | 2027-07-01 | 2027-07-30 | 29 | 信息化项目组 | 176h |
| 31 | 2.3.5 | 外围招采长尾完成 | milestone, manual | 0d | 2027-08-18 | 2027-08-18 | 30 | 信息化项目组 |  |
| 32 | 2.4 | 招采收口与合同履约管理 | manual | 96d | 2027-08-01 | 2028-01-31 |  | 信息化项目组 | 1056h |
| 33 | 2.5 | 基础设施 | manual | 48d | 2026-07-01 | 2026-09-30 |  | 基础设施工作组 | 528h |
| 34 | 2.5.1 | 基础设施-方案评审材料准备 | manual | 5.82d | 2026-07-01 | 2026-07-10 |  | 基础设施工作组 | 64h |
| 35 | 2.5.2 | 基础设施-技术方案与预算评审 | manual | 2.18d | 2026-07-13 | 2026-07-15 | 34 | 基础设施工作组 | 24h |
| 36 | 2.5.3 | 机房动力环境改造方案评审与招标 | manual | 16d | 2026-07-16 | 2026-08-14 | 35 | 信息化项目组 | 176h |
| 37 | 2.5.4 | 基础设施-招标/比选文件编制 | manual | 5.82d | 2026-07-16 | 2026-07-27 | 35 | 基础设施工作组 | 64h |
| 38 | 2.5.5 | 基础设施-招标/比选与答疑 | manual | 13.09d | 2026-07-28 | 2026-08-20 | 37 | 基础设施工作组 | 144h |
| 39 | 2.5.6 | 基础设施-评标/选型与商务谈判 | manual | 7.27d | 2026-08-21 | 2026-09-03 | 38 | 基础设施工作组 | 80h |
| 40 | 2.5.7 | 基础设施-合同审批与签订 | manual | 5.82d | 2026-09-04 | 2026-09-15 | 39 | 基础设施工作组 | 64h |
| 41 | 2.5.8 | 基础设施-供应商进场准备 | manual | 7.27d | 2026-09-16 | 2026-09-29 | 40 | 基础设施工作组 | 80h |
| 42 | 2.5.9 | 基础设施-供应商正式进场 | milestone, manual | 0d | 2026-09-30 | 2026-09-30 | 41 | 基础设施工作组 |  |
| 43 | 2.6 | AI服务器/本地模型环境 | manual | 48d | 2026-07-15 | 2026-10-14 |  | 基础设施工作组 | 528h |
| 44 | 2.6.1 | AI服务器/本地模型环境-方案评审材料准备 | manual | 5.82d | 2026-07-15 | 2026-07-24 |  | 基础设施工作组 | 64h |
| 45 | 2.6.2 | AI服务器/本地模型环境-技术方案与预算评审 | manual | 2.18d | 2026-07-27 | 2026-07-29 | 44 | 基础设施工作组 | 24h |
| 46 | 2.6.3 | AI服务器/本地模型环境-招标/比选文件编制 | manual | 5.82d | 2026-07-30 | 2026-08-10 | 45 | 基础设施工作组 | 64h |
| 47 | 2.6.4 | AI服务器/本地模型环境-招标/比选与答疑 | manual | 13.09d | 2026-08-11 | 2026-09-03 | 46 | 基础设施工作组 | 144h |
| 48 | 2.6.5 | AI服务器/本地模型环境-评标/选型与商务谈判 | manual | 7.27d | 2026-09-04 | 2026-09-17 | 47 | 基础设施工作组 | 80h |
| 49 | 2.6.6 | AI服务器/本地模型环境-合同审批与签订 | manual | 5.82d | 2026-09-18 | 2026-09-29 | 48 | 基础设施工作组 | 64h |
| 50 | 2.6.7 | AI服务器/本地模型环境-供应商进场准备 | manual | 7.27d | 2026-09-30 | 2026-10-13 | 49 | 基础设施工作组 | 80h |
| 51 | 2.6.8 | AI服务器/本地模型环境-供应商正式进场 | milestone, manual | 0d | 2026-10-14 | 2026-10-14 | 50 | 基础设施工作组 |  |
| 52 | 2.7 | 虚拟化/瘦终端平台 | manual | 48d | 2026-07-15 | 2026-10-14 |  | 基础设施工作组 | 528h |
| 53 | 2.7.1 | 虚拟化/瘦终端平台-方案评审材料准备 | manual | 5.82d | 2026-07-15 | 2026-07-24 |  | 基础设施工作组 | 64h |
| 54 | 2.7.2 | 虚拟化/瘦终端平台-技术方案与预算评审 | manual | 2.18d | 2026-07-27 | 2026-07-29 | 53 | 基础设施工作组 | 24h |
| 55 | 2.7.3 | 虚拟化/瘦终端平台-招标/比选文件编制 | manual | 5.82d | 2026-07-30 | 2026-08-10 | 54 | 基础设施工作组 | 64h |
| 56 | 2.7.4 | 虚拟化/瘦终端平台-招标/比选与答疑 | manual | 13.09d | 2026-08-11 | 2026-09-03 | 55 | 基础设施工作组 | 144h |
| 57 | 2.7.5 | 虚拟化/瘦终端平台-评标/选型与商务谈判 | manual | 7.27d | 2026-09-04 | 2026-09-17 | 56 | 基础设施工作组 | 80h |
| 58 | 2.7.6 | 虚拟化/瘦终端平台-合同审批与签订 | manual | 5.82d | 2026-09-18 | 2026-09-29 | 57 | 基础设施工作组 | 64h |
| 59 | 2.7.7 | 虚拟化/瘦终端平台-供应商进场准备 | manual | 7.27d | 2026-09-30 | 2026-10-13 | 58 | 基础设施工作组 | 80h |
| 60 | 2.7.8 | 虚拟化/瘦终端平台-供应商正式进场 | milestone, manual | 0d | 2026-10-14 | 2026-10-14 | 59 | 基础设施工作组 |  |
| 61 | 2.8 | PLM深化 | manual | 53.09d | 2026-08-17 | 2026-11-25 |  | PLM工作组 | 584h |
| 62 | 2.8.1 | PLM深化-方案评审材料准备 | manual | 5.82d | 2026-08-17 | 2026-08-26 |  | PLM工作组 | 64h |
| 63 | 2.8.2 | PLM深化-技术方案与预算评审 | manual | 2.18d | 2026-08-27 | 2026-08-31 | 62 | PLM工作组 | 24h |
| 64 | 2.8.3 | PLM深化-招标/比选文件编制 | manual | 5.82d | 2026-09-01 | 2026-09-10 | 63 | PLM工作组 | 64h |
| 65 | 2.8.4 | PLM深化-招标/比选与答疑 | manual | 18.18d | 2026-09-11 | 2026-10-15 | 64 | PLM工作组 | 200h |
| 66 | 2.8.5 | PLM深化-评标/选型与商务谈判 | manual | 7.27d | 2026-10-16 | 2026-10-29 | 65 | PLM工作组 | 80h |
| 67 | 2.8.6 | PLM深化-合同审批与签订 | manual | 5.82d | 2026-10-30 | 2026-11-10 | 66 | PLM工作组 | 64h |
| 68 | 2.8.7 | PLM深化-供应商进场准备 | manual | 7.27d | 2026-11-11 | 2026-11-24 | 67 | PLM工作组 | 80h |
| 69 | 2.8.8 | PLM深化-供应商正式进场 | milestone, manual | 0d | 2026-11-25 | 2026-11-25 | 68 | PLM工作组 |  |
| 70 | 2.9 | MES/QMS | manual | 53.09d | 2026-09-01 | 2026-12-10 |  | MES工作组 | 584h |

Notes:
- 1: 总体牵头：信息化项目组；重大事项提交项目决策组
- 16: 供应商未定项目采用保守招采周期；合同后设置2周进场准备
- 17: 核心系统招采需满足WBS9联调准备条件。
- 18: 冻结PLM、MES/QMS、ERP扩容、OA、基础设施等核心采购包边界。
- 19: 核心招采关键路径。
- 20: 核心招采关键路径。
- 21: ERP为现有服务器扩容，不是新建ERP系统采购。
- 22: OA采购作为独立采购包，不能被ERP/OA实施补强替代。
- 23: 核心供应商共同确认接口、数据、环境、联调边界。
- 24: WBS9不得依赖WBS2一级摘要，必须依赖本节点。
- 25: 承接机房动力、虚拟化、存储备份、AI GPU、Oracle HA等底座类采购和验收。
- 26: 不作为WBS9联调启动前置。
- 27: 外围招采不阻塞WBS9联调启动。
- 28: 外围招采不阻塞WBS9联调启动。
- 29: 外围招采不阻塞WBS9联调启动。
- 30: 外围招采不阻塞WBS9联调启动。
- 31: 外围招采不阻塞WBS9联调启动。
- 32: 用于合同技术附件、付款节点、临时放行与履约风险归档。
- 33: 自动生成父级摘要，用于修复 WBS 树结构
- 34: 重大评审尽量串行；供应商合同后2周进场准备
- 35: 重大评审尽量串行；供应商合同后2周进场准备
- 36: 包含UPS扩容、PDU、机柜承重及散热改造；必须支撑GPU服务器到货前施工准备。
- 37: 重大评审尽量串行；供应商合同后2周进场准备
- 38: 重大评审尽量串行；供应商合同后2周进场准备
- 39: 重大评审尽量串行；供应商合同后2周进场准备
- 40: 重大评审尽量串行；供应商合同后2周进场准备
- 41: 重大评审尽量串行；供应商合同后2周进场准备
- 42: 重大评审尽量串行；供应商合同后2周进场准备
- 43: 自动生成父级摘要，用于修复 WBS 树结构
- 44: 重大评审尽量串行；供应商合同后2周进场准备
- 45: 重大评审尽量串行；供应商合同后2周进场准备
- 46: 重大评审尽量串行；供应商合同后2周进场准备
- 47: 重大评审尽量串行；供应商合同后2周进场准备
- 48: 重大评审尽量串行；供应商合同后2周进场准备
- 49: 重大评审尽量串行；供应商合同后2周进场准备
- 50: 重大评审尽量串行；供应商合同后2周进场准备
- 51: 重大评审尽量串行；供应商合同后2周进场准备
- 52: 自动生成父级摘要，用于修复 WBS 树结构
- 53: 重大评审尽量串行；供应商合同后2周进场准备
- 54: 重大评审尽量串行；供应商合同后2周进场准备
- 55: 重大评审尽量串行；供应商合同后2周进场准备
- 56: 重大评审尽量串行；供应商合同后2周进场准备
- 57: 重大评审尽量串行；供应商合同后2周进场准备
- 58: 重大评审尽量串行；供应商合同后2周进场准备
- 59: 重大评审尽量串行；供应商合同后2周进场准备
- 60: 重大评审尽量串行；供应商合同后2周进场准备
- 61: 自动生成父级摘要，用于修复 WBS 树结构
- 62: 重大评审尽量串行；供应商合同后2周进场准备
- 63: 重大评审尽量串行；供应商合同后2周进场准备
- 64: 重大评审尽量串行；供应商合同后2周进场准备
- 65: 重大评审尽量串行；供应商合同后2周进场准备
- 66: 重大评审尽量串行；供应商合同后2周进场准备
- 67: 重大评审尽量串行；供应商合同后2周进场准备
- 68: 重大评审尽量串行；供应商合同后2周进场准备
- 69: 重大评审尽量串行；供应商合同后2周进场准备
- 70: 自动生成父级摘要，用于修复 WBS 树结构

| ID | WBS | Task | Type | Duration | Start | Finish | Predecessors | Resources | Work |
| --- | --- | --- | --- | --- | --- | --- | --- | --- | --- |
| 71 | 2.9.1 | MES/QMS-方案评审材料准备 | manual | 5.82d | 2026-09-01 | 2026-09-10 |  | MES工作组 | 64h |
| 72 | 2.9.2 | MES/QMS-技术方案与预算评审 | manual | 2.18d | 2026-09-11 | 2026-09-15 | 71 | MES工作组 | 24h |
| 73 | 2.9.3 | MES/QMS-招标/比选文件编制 | manual | 5.82d | 2026-09-16 | 2026-09-25 | 72 | MES工作组 | 64h |
| 74 | 2.9.4 | MES/QMS-招标/比选与答疑 | manual | 18.18d | 2026-09-28 | 2026-10-30 | 73 | MES工作组 | 200h |
| 75 | 2.9.5 | MES/QMS-评标/选型与商务谈判 | manual | 7.27d | 2026-11-02 | 2026-11-13 | 74 | MES工作组 | 80h |
| 76 | 2.9.6 | MES/QMS-合同审批与签订 | manual | 5.82d | 2026-11-16 | 2026-11-25 | 75 | MES工作组 | 64h |
| 77 | 2.9.7 | MES/QMS-供应商进场准备 | manual | 7.27d | 2026-11-26 | 2026-12-09 | 76 | MES工作组 | 80h |
| 78 | 2.9.8 | MES/QMS-供应商正式进场 | milestone, manual | 0d | 2026-12-10 | 2026-12-10 | 77 | MES工作组 |  |
| 79 | 2.10 | ERP服务器扩容 | manual | 37.82d | 2026-08-10 | 2026-10-20 |  | ERP·OA工作组 | 416h |
| 80 | 2.10.1 | ERP服务器现状资源评估与扩容需求确认 | manual | 3.64d | 2026-08-10 | 2026-08-14 | 9 | ERP·OA工作组 | 40h |
| 81 | 2.10.2 | ERP服务器扩容方案与预算评审 | manual | 3.64d | 2026-08-17 | 2026-08-21 | 80 | ERP·OA工作组 | 40h |
| 82 | 2.10.3 | ERP服务器扩容采购/订单文件编制 | manual | 5.82d | 2026-08-24 | 2026-09-02 | 81 | ERP·OA工作组 | 64h |
| 83 | 2.10.4 | ERP服务器扩容采购/比选与商务确认 | manual | 8.73d | 2026-09-03 | 2026-09-18 | 82 | ERP·OA工作组 | 96h |
| 84 | 2.10.5 | ERP服务器扩容合同/订单审批 | manual | 3.64d | 2026-09-21 | 2026-09-25 | 83 | ERP·OA工作组 | 40h |
| 85 | 2.10.6 | ERP服务器扩容到货验收与资源上架 | manual | 5.82d | 2026-09-28 | 2026-10-07 | 84 | ERP·OA工作组 | 64h |
| 86 | 2.10.7 | ERP U8扩容环境部署与性能验证 | manual | 5.82d | 2026-10-08 | 2026-10-19 | 85 | ERP·OA工作组 | 64h |
| 87 | 2.10.8 | ERP服务器扩容完成 | milestone, manual | 0d | 2026-10-20 | 2026-10-20 | 86 | ERP·OA工作组 |  |
| 88 | 2.11 | OA系统采购 | manual | 48d | 2026-08-10 | 2026-11-09 |  | ERP·OA工作组 | 528h |
| 89 | 2.11.1 | OA系统采购需求确认与边界梳理 | manual | 4.36d | 2026-08-10 | 2026-08-17 | 9 | ERP·OA工作组 | 48h |
| 90 | 2.11.2 | OA系统技术方案与预算评审 | manual | 3.64d | 2026-08-18 | 2026-08-24 | 89 | ERP·OA工作组 | 40h |
| 91 | 2.11.3 | OA系统招标/比选文件编制 | manual | 5.82d | 2026-08-25 | 2026-09-03 | 90 | ERP·OA工作组 | 64h |
| 92 | 2.11.4 | OA系统招标/比选与答疑 | manual | 13.09d | 2026-09-04 | 2026-09-29 | 91 | ERP·OA工作组 | 144h |
| 93 | 2.11.5 | OA系统评标/选型与商务谈判 | manual | 7.27d | 2026-09-30 | 2026-10-13 | 92 | ERP·OA工作组 | 80h |
| 94 | 2.11.6 | OA系统合同审批与签订 | manual | 5.82d | 2026-10-14 | 2026-10-23 | 93 | ERP·OA工作组 | 64h |
| 95 | 2.11.7 | OA系统供应商进场准备 | manual | 7.27d | 2026-10-26 | 2026-11-06 | 94 | ERP·OA工作组 | 80h |
| 96 | 2.11.8 | OA系统供应商正式进场 | milestone, manual | 0d | 2026-11-09 | 2026-11-09 | 95 | ERP·OA工作组 |  |
| 97 | 2.12 | 设备数据采集硬件/网关 | manual | 53.09d | 2027-05-10 | 2027-08-18 |  | MES工作组 | 584h |
| 98 | 2.12.1 | 设备数据采集硬件/网关-方案评审材料准备 | manual | 5.82d | 2027-05-10 | 2027-05-19 |  | MES工作组 | 64h |
| 99 | 2.12.2 | 设备数据采集硬件/网关-技术方案与预算评审 | manual | 2.18d | 2027-05-20 | 2027-05-24 | 98 | MES工作组 | 24h |
| 100 | 2.12.3 | 设备数据采集硬件/网关-招标/比选文件编制 | manual | 5.82d | 2027-05-25 | 2027-06-03 | 99 | MES工作组 | 64h |
| 101 | 2.12.4 | 设备数据采集硬件/网关-招标/比选与答疑 | manual | 18.18d | 2027-06-04 | 2027-07-08 | 100 | MES工作组 | 200h |
| 102 | 2.12.5 | 设备数据采集硬件/网关-评标/选型与商务谈判 | manual | 7.27d | 2027-07-09 | 2027-07-22 | 101 | MES工作组 | 80h |
| 103 | 2.12.6 | 设备数据采集硬件/网关-合同审批与签订 | manual | 5.82d | 2027-07-23 | 2027-08-03 | 102 | MES工作组 | 64h |
| 104 | 2.12.7 | 设备数据采集硬件/网关-供应商进场准备 | manual | 7.27d | 2027-08-04 | 2027-08-17 | 103 | MES工作组 | 80h |
| 105 | 2.12.8 | 设备数据采集硬件/网关-供应商正式进场 | milestone, manual | 0d | 2027-08-18 | 2027-08-18 | 104 | MES工作组 |  |
| 106 | 3 | 数据标准与主数据治理 | manual | 313.45d | 2026-06-08 | 2028-01-31 |  | 信息化项目组 | 3448h |
| 107 | 3.1 | 组织/部门/岗位/人员标准 | manual | 13.09d | 2026-06-08 | 2026-07-01 |  | MDM工作组 | 144h |
| 108 | 3.1.1 | 组织/部门/岗位/人员标准-现状盘点 | manual | 3.64d | 2026-06-08 | 2026-06-12 |  | MDM工作组 | 40h |
| 109 | 3.1.2 | 组织/部门/岗位/人员标准-标准草案编制 | manual | 4.36d | 2026-06-15 | 2026-06-22 | 108 | MDM工作组 | 48h |
| 110 | 3.1.3 | 组织/部门/岗位/人员标准-业务评审 | manual | 2.18d | 2026-06-23 | 2026-06-25 | 109 | MDM工作组 | 24h |
| 111 | 3.1.4 | 组织/部门/岗位/人员标准-修订确认 | manual | 2.91d | 2026-06-26 | 2026-07-01 | 110 | MDM工作组 | 32h |
| 112 | 3.2 | 物料分类与物料编码标准 | manual | 13.09d | 2026-07-02 | 2026-07-27 |  | MDM工作组 | 144h |
| 113 | 3.2.1 | 物料分类与物料编码标准-现状盘点 | manual | 3.64d | 2026-07-02 | 2026-07-08 |  | MDM工作组 | 40h |
| 114 | 3.2.2 | 物料分类与物料编码标准-标准草案编制 | manual | 4.36d | 2026-07-09 | 2026-07-16 | 113 | MDM工作组 | 48h |
| 115 | 3.2.3 | 物料分类与物料编码标准-业务评审 | manual | 2.18d | 2026-07-17 | 2026-07-21 | 114 | MDM工作组 | 24h |
| 116 | 3.2.4 | 物料分类与物料编码标准-修订确认 | manual | 2.91d | 2026-07-22 | 2026-07-27 | 115 | MDM工作组 | 32h |
| 117 | 3.3 | EBOM/PBOM/MBOM数据口径 | manual | 13.09d | 2026-07-28 | 2026-08-20 |  | MDM工作组 | 144h |
| 118 | 3.3.1 | EBOM/PBOM/MBOM数据口径-现状盘点 | manual | 3.64d | 2026-07-28 | 2026-08-03 |  | MDM工作组 | 40h |
| 119 | 3.3.2 | EBOM/PBOM/MBOM数据口径-标准草案编制 | manual | 4.36d | 2026-08-04 | 2026-08-11 | 118 | MDM工作组 | 48h |
| 120 | 3.3.3 | EBOM/PBOM/MBOM数据口径-业务评审 | manual | 2.18d | 2026-08-12 | 2026-08-14 | 119 | MDM工作组 | 24h |
| 121 | 3.3.4 | EBOM/PBOM/MBOM数据口径-修订确认 | manual | 2.91d | 2026-08-17 | 2026-08-20 | 120 | MDM工作组 | 32h |
| 122 | 3.4 | 工艺资源标准 | manual | 13.09d | 2026-08-21 | 2026-09-15 |  | MDM工作组 | 144h |
| 123 | 3.4.1 | 工艺资源标准-现状盘点 | manual | 3.64d | 2026-08-21 | 2026-08-27 |  | MDM工作组 | 40h |
| 124 | 3.4.2 | 工艺资源标准-标准草案编制 | manual | 4.36d | 2026-08-28 | 2026-09-04 | 123 | MDM工作组 | 48h |
| 125 | 3.4.3 | 工艺资源标准-业务评审 | manual | 2.18d | 2026-09-07 | 2026-09-09 | 124 | MDM工作组 | 24h |
| 126 | 3.4.4 | 工艺资源标准-修订确认 | manual | 2.91d | 2026-09-10 | 2026-09-15 | 125 | MDM工作组 | 32h |
| 127 | 3.5 | 供应商/客户/项目/架次标准 | manual | 13.09d | 2026-09-16 | 2026-10-09 |  | MDM工作组 | 144h |
| 128 | 3.5.1 | 供应商/客户/项目/架次标准-现状盘点 | manual | 3.64d | 2026-09-16 | 2026-09-22 |  | MDM工作组 | 40h |
| 129 | 3.5.2 | 供应商/客户/项目/架次标准-标准草案编制 | manual | 4.36d | 2026-09-23 | 2026-09-30 | 128 | MDM工作组 | 48h |
| 130 | 3.5.3 | 供应商/客户/项目/架次标准-业务评审 | manual | 2.18d | 2026-10-01 | 2026-10-05 | 129 | MDM工作组 | 24h |
| 131 | 3.5.4 | 供应商/客户/项目/架次标准-修订确认 | manual | 2.91d | 2026-10-06 | 2026-10-09 | 130 | MDM工作组 | 32h |
| 132 | 3.6 | 库房/库位/批次/条码规则 | manual | 13.09d | 2026-10-12 | 2026-11-04 |  | MDM工作组 | 144h |
| 133 | 3.6.1 | 库房/库位/批次/条码规则-现状盘点 | manual | 3.64d | 2026-10-12 | 2026-10-16 |  | MDM工作组 | 40h |
| 134 | 3.6.2 | 库房/库位/批次/条码规则-标准草案编制 | manual | 4.36d | 2026-10-19 | 2026-10-26 | 133 | MDM工作组 | 48h |
| 135 | 3.6.3 | 库房/库位/批次/条码规则-业务评审 | manual | 2.18d | 2026-10-27 | 2026-10-29 | 134 | MDM工作组 | 24h |
| 136 | 3.6.4 | 库房/库位/批次/条码规则-修订确认 | manual | 2.91d | 2026-10-30 | 2026-11-04 | 135 | MDM工作组 | 32h |
| 137 | 3.7 | 主数据清洗去重补全 | manual | 13.09d | 2026-11-05 | 2026-11-30 |  | MDM工作组 | 144h |
| 138 | 3.7.1 | 主数据清洗去重补全-现状盘点 | manual | 3.64d | 2026-11-05 | 2026-11-11 |  | MDM工作组 | 40h |
| 139 | 3.7.2 | 主数据清洗去重补全-标准草案编制 | manual | 4.36d | 2026-11-12 | 2026-11-19 | 138 | MDM工作组 | 48h |
| 140 | 3.7.3 | 主数据清洗去重补全-业务评审 | manual | 2.18d | 2026-11-20 | 2026-11-24 | 139 | MDM工作组 | 24h |

Notes:
- 71: 重大评审尽量串行；供应商合同后2周进场准备
- 72: 重大评审尽量串行；供应商合同后2周进场准备
- 73: 重大评审尽量串行；供应商合同后2周进场准备
- 74: 重大评审尽量串行；供应商合同后2周进场准备
- 75: 重大评审尽量串行；供应商合同后2周进场准备
- 76: 重大评审尽量串行；供应商合同后2周进场准备
- 77: 重大评审尽量串行；供应商合同后2周进场准备
- 78: 重大评审尽量串行；供应商合同后2周进场准备
- 79: 当前已有ERP服务器，本阶段仅体现扩容需求、采购/订单、到货验收、U8环境部署与性能验证，不作为新建ERP服务器采购。
- 80: ERP已有服务器，本任务体现扩容与环境验证，不重复定义新ERP服务器采购。
- 81: ERP已有服务器，本任务体现扩容与环境验证，不重复定义新ERP服务器采购。
- 82: ERP已有服务器，本任务体现扩容与环境验证，不重复定义新ERP服务器采购。
- 83: ERP已有服务器，本任务体现扩容与环境验证，不重复定义新ERP服务器采购。
- 84: ERP已有服务器，本任务体现扩容与环境验证，不重复定义新ERP服务器采购。
- 85: ERP已有服务器，本任务体现扩容与环境验证，不重复定义新ERP服务器采购。
- 86: ERP已有服务器，本任务体现扩容与环境验证，不重复定义新ERP服务器采购。
- 87: ERP已有服务器，本任务体现扩容与环境验证，不重复定义新ERP服务器采购。
- 88: 补充OA系统采购包，覆盖需求、方案预算、招标/比选、合同签订、供应商进场。
- 89: WBS2补充OA系统采购，后续实施/接口改造仍在WBS7 ERP/OA补强中体现。
- 90: WBS2补充OA系统采购，后续实施/接口改造仍在WBS7 ERP/OA补强中体现。
- 91: WBS2补充OA系统采购，后续实施/接口改造仍在WBS7 ERP/OA补强中体现。
- 92: WBS2补充OA系统采购，后续实施/接口改造仍在WBS7 ERP/OA补强中体现。
- 93: WBS2补充OA系统采购，后续实施/接口改造仍在WBS7 ERP/OA补强中体现。
- 94: WBS2补充OA系统采购，后续实施/接口改造仍在WBS7 ERP/OA补强中体现。
- 95: WBS2补充OA系统采购，后续实施/接口改造仍在WBS7 ERP/OA补强中体现。
- 96: WBS2补充OA系统采购，后续实施/接口改造仍在WBS7 ERP/OA补强中体现。
- 97: 自动生成父级摘要，用于修复 WBS 树结构
- 98: 重大评审尽量串行；供应商合同后2周进场准备
- 99: 重大评审尽量串行；供应商合同后2周进场准备
- 100: 重大评审尽量串行；供应商合同后2周进场准备
- 101: 重大评审尽量串行；供应商合同后2周进场准备
- 102: 重大评审尽量串行；供应商合同后2周进场准备
- 103: 重大评审尽量串行；供应商合同后2周进场准备
- 104: 重大评审尽量串行；供应商合同后2周进场准备
- 105: 重大评审尽量串行；供应商合同后2周进场准备
- 106: MDM先行，支撑PLM/MES/ERP集成
- 107: 自动生成父级摘要，用于修复 WBS 树结构
- 108: 所有资源均按瓶颈处理，关键评审避免重叠
- 109: 所有资源均按瓶颈处理，关键评审避免重叠
- 110: 所有资源均按瓶颈处理，关键评审避免重叠
- 111: 所有资源均按瓶颈处理，关键评审避免重叠
- 112: 自动生成父级摘要，用于修复 WBS 树结构
- 113: 所有资源均按瓶颈处理，关键评审避免重叠
- 114: 所有资源均按瓶颈处理，关键评审避免重叠
- 115: 所有资源均按瓶颈处理，关键评审避免重叠
- 116: 所有资源均按瓶颈处理，关键评审避免重叠
- 117: 自动生成父级摘要，用于修复 WBS 树结构
- 118: 所有资源均按瓶颈处理，关键评审避免重叠
- 119: 所有资源均按瓶颈处理，关键评审避免重叠
- 120: 所有资源均按瓶颈处理，关键评审避免重叠
- 121: 所有资源均按瓶颈处理，关键评审避免重叠
- 122: 自动生成父级摘要，用于修复 WBS 树结构
- 123: 所有资源均按瓶颈处理，关键评审避免重叠
- 124: 所有资源均按瓶颈处理，关键评审避免重叠
- 125: 所有资源均按瓶颈处理，关键评审避免重叠
- 126: 所有资源均按瓶颈处理，关键评审避免重叠
- 127: 自动生成父级摘要，用于修复 WBS 树结构
- 128: 所有资源均按瓶颈处理，关键评审避免重叠
- 129: 所有资源均按瓶颈处理，关键评审避免重叠
- 130: 所有资源均按瓶颈处理，关键评审避免重叠
- 131: 所有资源均按瓶颈处理，关键评审避免重叠
- 132: 自动生成父级摘要，用于修复 WBS 树结构
- 133: 所有资源均按瓶颈处理，关键评审避免重叠
- 134: 所有资源均按瓶颈处理，关键评审避免重叠
- 135: 所有资源均按瓶颈处理，关键评审避免重叠
- 136: 所有资源均按瓶颈处理，关键评审避免重叠
- 137: 自动生成父级摘要，用于修复 WBS 树结构
- 138: 所有资源均按瓶颈处理，关键评审避免重叠
- 139: 所有资源均按瓶颈处理，关键评审避免重叠
- 140: 所有资源均按瓶颈处理，关键评审避免重叠

| ID | WBS | Task | Type | Duration | Start | Finish | Predecessors | Resources | Work |
| --- | --- | --- | --- | --- | --- | --- | --- | --- | --- |
| 141 | 3.7.4 | 主数据清洗去重补全-修订确认 | manual | 2.91d | 2026-11-25 | 2026-11-30 | 140 | MDM工作组 | 32h |
| 142 | 3.8 | 数据质量问题清单建立 | manual | 13.09d | 2026-12-01 | 2026-12-24 |  | MDM工作组 | 144h |
| 143 | 3.8.1 | 数据质量问题清单建立-现状盘点 | manual | 3.64d | 2026-12-01 | 2026-12-07 |  | MDM工作组 | 40h |
| 144 | 3.8.2 | 数据质量问题清单建立-标准草案编制 | manual | 4.36d | 2026-12-08 | 2026-12-15 | 143 | MDM工作组 | 48h |
| 145 | 3.8.3 | 数据质量问题清单建立-业务评审 | manual | 2.18d | 2026-12-16 | 2026-12-18 | 144 | MDM工作组 | 24h |
| 146 | 3.8.4 | 数据质量问题清单建立-修订确认 | manual | 2.91d | 2026-12-21 | 2026-12-24 | 145 | MDM工作组 | 32h |
| 147 | 3.9 | 主数据标准V1.0发布培训 | manual | 13.09d | 2026-12-25 | 2027-01-19 |  | MDM工作组 | 144h |
| 148 | 3.9.1 | 主数据标准V1.0发布培训-现状盘点 | manual | 3.64d | 2026-12-25 | 2026-12-31 |  | MDM工作组 | 40h |
| 149 | 3.9.2 | 主数据标准V1.0发布培训-标准草案编制 | manual | 4.36d | 2027-01-01 | 2027-01-08 | 148 | MDM工作组 | 48h |
| 150 | 3.9.3 | 主数据标准V1.0发布培训-业务评审 | manual | 2.18d | 2027-01-11 | 2027-01-13 | 149 | MDM工作组 | 24h |
| 151 | 3.9.4 | 主数据标准V1.0发布培训-修订确认 | manual | 2.91d | 2027-01-14 | 2027-01-19 | 150 | MDM工作组 | 32h |
| 152 | 3.10 | 数据标准V1.0发布 | milestone, manual | 0d | 2027-01-20 | 2027-01-20 | 151 | MDM工作组 |  |
| 153 | 3.11 | 主数据V0.8设计版冻结 | milestone, manual | 0d | 2026-08-14 | 2026-08-14 |  | MDM工作组 |  |
| 154 | 3.12 | 主数据V0.8技术交底会 | manual | 2.18d | 2026-08-17 | 2026-08-19 | 153 | MDM工作组 | 24h |
| 155 | 3.13 | 主数据V0.9字段草案发布 | milestone, manual | 0d | 2026-09-11 | 2026-09-11 | 154 | MDM工作组 |  |
| 156 | 3.14 | 主数据V0.9变更影响评估 | manual | 3.64d | 2026-09-14 | 2026-09-18 | 155 | MDM工作组 | 40h |
| 157 | 3.15 | 主数据V1.0开发版冻结 | milestone, manual | 0d | 2026-12-31 | 2026-12-31 | 156 | MDM工作组 |  |
| 158 | 3.16 | 主数据V1.0书面技术交底 | manual | 2.18d | 2027-01-04 | 2027-01-06 | 157 | MDM工作组 | 24h |
| 159 | 3.17 | 主数据V1.1联调版冻结 | milestone, manual | 0d | 2027-04-07 | 2027-04-07 | 158 | MDM工作组 |  |
| 160 | 3.18 | 主数据版本变更台账维护 | manual | 274.91d | 2026-08-20 | 2028-01-31 |  | MDM工作组 | 3024h |
| 161 | 3.19 | 主数据变更24小时交底机制 | manual | 274.91d | 2026-08-20 | 2028-01-31 |  | MDM工作组 | 3024h |
| 162 | 4 | MDM建设准备与数据治理沉淀 | manual | 113.45d | 2026-07-01 | 2027-02-03 |  | 信息化项目组 | 1248h |
| 163 | 4.1 | 流程地图与数据地图范围确认 | manual | 5.82d | 2026-07-01 | 2026-07-10 |  | MDM工作组 | 64h |
| 164 | 4.2 | 主数据对象与责任边界梳理 | manual | 5.82d | 2026-07-13 | 2026-07-22 | 163 | MDM工作组 | 64h |
| 165 | 4.3 | 元数据模型与字段口径梳理 | manual | 4.36d | 2026-07-23 | 2026-07-30 | 164 | MDM工作组 | 48h |
| 166 | 4.4 | 主数据模型与映射关系整理 | manual | 5.82d | 2026-07-31 | 2026-08-11 | 165 | MDM工作组 | 64h |
| 167 | 4.5 | 治理角色与权限边界设计 | manual | 4.36d | 2026-08-12 | 2026-08-19 | 166 | MDM工作组 | 48h |
| 168 | 4.6 | 版本管理与分发口径设计 | manual | 4.36d | 2026-08-20 | 2026-08-27 | 167 | MDM工作组 | 48h |
| 169 | 4.7 | 数据质量规则库整理 | manual | 4.36d | 2026-08-28 | 2026-09-04 | 168 | MDM工作组 | 48h |
| 170 | 4.8 | 数据质量指标口径整理 | manual | 3.64d | 2026-09-07 | 2026-09-11 | 169 | MDM工作组 | 40h |
| 171 | 4.9 | 治理资料库与版本台账建立 | manual | 2.91d | 2026-09-14 | 2026-09-17 | 170 | MDM工作组 | 32h |
| 172 | 4.10 | 主数据规则台账样例整理 | manual | 8.73d | 2026-09-18 | 2026-10-05 | 171 | MDM工作组 | 96h |
| 173 | 4.11 | 主数据变更审核口径整理 | manual | 7.27d | 2026-10-06 | 2026-10-19 | 172 | MDM工作组 | 80h |
| 174 | 4.12 | 版本管理样例整理 | manual | 5.82d | 2026-10-20 | 2026-10-29 | 173 | MDM工作组 | 64h |
| 175 | 4.13 | 分发规则与接口校验口径整理 | manual | 7.27d | 2026-10-30 | 2026-11-12 | 174 | MDM工作组 | 80h |
| 176 | 4.14 | 质量规则与接口校验口径整理 | manual | 7.27d | 2026-11-13 | 2026-11-26 | 175 | MDM工作组 | 80h |
| 177 | 4.15 | 数据质量看板样例整理 | manual | 5.82d | 2026-11-27 | 2026-12-08 | 176 | MDM工作组 | 64h |
| 178 | 4.16 | 数据纠正通知机制口径整理 | manual | 4.36d | 2026-12-09 | 2026-12-16 | 177 | MDM工作组 | 48h |
| 179 | 4.17 | AI辅助治理文档整理规范制定 | manual | 2.91d | 2026-12-17 | 2026-12-22 | 178 | MDM工作组 | 32h |
| 180 | 4.18 | 治理样例核对与问题修正 | manual | 5.82d | 2026-12-23 | 2027-01-01 | 179 | MDM工作组 | 64h |
| 181 | 4.19 | 跨系统主数据口径一致性评审 | manual | 5.82d | 2027-01-04 | 2027-01-13 | 180 | MDM工作组 | 64h |
| 182 | 4.20 | 治理资料使用说明编制 | manual | 3.64d | 2027-01-14 | 2027-01-20 | 181 | MDM工作组 | 40h |
| 183 | 4.21 | 数据治理沉淀评审准备 | manual | 2.18d | 2027-01-21 | 2027-01-25 | 182 | MDM工作组 | 24h |
| 184 | 4.22 | 过渡期规则中心可用口径确认 | milestone, manual | 0d | 2027-01-26 | 2027-01-26 | 183 | MDM工作组 |  |
| 185 | 4.23 | 规则中心试运行口径报告 | manual | 3.64d | 2027-01-27 | 2027-02-02 | 184 | MDM工作组 | 40h |
| 186 | 4.24 | MDM建设准备与数据治理沉淀阶段验收 | milestone, manual | 0d | 2027-02-03 | 2027-02-03 | 185 | MDM工作组 |  |
| 187 | 5 | 基础设施与AI底座 | manual | 82.18d | 2026-08-17 | 2027-01-20 |  | 信息化项目组 | 904h |
| 188 | 5.1 | 基础资源先行交付 | manual | 29.09d | 2026-08-03 | 2026-09-25 |  | 基础设施工作组 | 320h |
| 189 | 5.1.1 | 基础虚拟化资源池初始化 | manual | 7.27d | 2026-08-03 | 2026-08-14 |  | 基础设施工作组 | 80h |
| 190 | 5.1.2 | 基础网络与管理网开通 | manual | 7.27d | 2026-08-17 | 2026-08-28 | 189 | 基础设施工作组 | 80h |
| 191 | 5.1.3 | 测试环境资源配额确认 | manual | 3.64d | 2026-08-31 | 2026-09-04 | 190 | 基础设施工作组 | 40h |
| 192 | 5.1.4 | PLM测试环境资源交付 | milestone, manual | 0d | 2026-09-07 | 2026-09-07 | 191 | 基础设施工作组 |  |
| 193 | 5.1.5 | MES/QMS测试环境资源交付 | milestone, manual | 0d | 2026-09-14 | 2026-09-14 | 191 | 基础设施工作组 |  |
| 194 | 5.1.6 | ERP/OA测试环境资源交付 | milestone, manual | 0d | 2026-09-21 | 2026-09-21 | 191 | 基础设施工作组 |  |
| 195 | 5.1.7 | 基础资源先行交付验收 | manual | 2.18d | 2026-09-23 | 2026-09-25 | 192, 193, 194 | 基础设施工作组 | 24h |
| 196 | 5.2 | 服务器与虚拟化平台 | manual | 23.27d | 2026-08-17 | 2026-09-29 |  | 基础设施工作组 | 256h |
| 197 | 5.2.1 | 服务器与虚拟化平台-到货验收 | manual | 2.18d | 2026-08-17 | 2026-08-19 |  | 基础设施工作组 | 24h |
| 198 | 5.2.2 | 服务器与虚拟化平台-虚拟化部署 | manual | 5.09d | 2026-08-20 | 2026-08-28 | 197 | 基础设施工作组 | 56h |
| 199 | 5.2.3 | 服务器与虚拟化平台-资源池配置 | manual | 5.09d | 2026-08-31 | 2026-09-08 | 198 | 基础设施工作组 | 56h |
| 200 | 5.2.4 | 资源池隔离划分与业务落位确认 | manual | 3.64d | 2026-09-09 | 2026-09-15 | 199 | 基础设施工作组 | 40h |
| 201 | 5.2.5 | 服务器与虚拟化平台-高可用测试 | manual | 5.09d | 2026-09-16 | 2026-09-24 | 200 | 基础设施工作组 | 56h |
| 202 | 5.2.6 | 服务器与虚拟化平台-验收 | manual | 2.18d | 2026-09-25 | 2026-09-29 | 201 | 基础设施工作组 | 24h |
| 203 | 5.3 | 存储与备份 | manual | 32.73d | 2026-09-01 | 2026-11-02 |  | 基础设施工作组 | 360h |
| 204 | 5.3.1 | 存储与备份-存储部署 | manual | 5.09d | 2026-09-01 | 2026-09-09 |  | 基础设施工作组 | 56h |
| 205 | 5.3.2 | 存储与备份-备份方案配置 | manual | 5.09d | 2026-09-10 | 2026-09-18 | 204 | 基础设施工作组 | 56h |
| 206 | 5.3.3 | 统一备份平台业务纳管接入 | manual | 5.09d | 2026-09-21 | 2026-09-29 | 205 | 基础设施工作组 | 56h |
| 207 | 5.3.4 | 不可变备份/防勒索策略配置与验证 | manual | 5.09d | 2026-09-30 | 2026-10-08 | 206 | 基础设施工作组 | 56h |
| 208 | 5.3.5 | 存储与备份-备份策略测试 | manual | 5.09d | 2026-10-09 | 2026-10-19 | 207 | 基础设施工作组 | 56h |
| 209 | 5.3.6 | 存储与备份-恢复演练 | manual | 5.09d | 2026-10-20 | 2026-10-28 | 208 | 基础设施工作组 | 56h |
| 210 | 5.3.7 | 存储与备份-验收 | manual | 2.18d | 2026-10-29 | 2026-11-02 | 209 | 基础设施工作组 | 24h |

Notes:
- 141: 所有资源均按瓶颈处理，关键评审避免重叠
- 142: 自动生成父级摘要，用于修复 WBS 树结构
- 143: 所有资源均按瓶颈处理，关键评审避免重叠
- 144: 所有资源均按瓶颈处理，关键评审避免重叠
- 145: 所有资源均按瓶颈处理，关键评审避免重叠
- 146: 所有资源均按瓶颈处理，关键评审避免重叠
- 147: 自动生成父级摘要，用于修复 WBS 树结构
- 148: 所有资源均按瓶颈处理，关键评审避免重叠
- 149: 所有资源均按瓶颈处理，关键评审避免重叠
- 150: 所有资源均按瓶颈处理，关键评审避免重叠
- 151: 所有资源均按瓶颈处理，关键评审避免重叠
- 153: 放行范围：业务蓝图、原型设计；禁止推进：核心接口开发、正式数据迁移
- 154: 放行范围：各系统蓝图设计
- 155: 放行范围：单体配置、测试样例准备；禁止推进：生产接口开发、正式联调
- 156: 放行范围：控制V0.8到V0.9变化
- 157: 放行范围：核心接口开发、数据清洗、接口规格冻结；禁止推进：全系统联调、主数据分发终验
- 158: 放行范围：接口开发启动
- 159: 放行范围：全系统联调、业务穿透测试、主数据一致性校验；禁止推进：无审批的标准变更
- 160: 放行范围：全周期
- 161: 放行范围：A类重大变更
- 162: 本期不承诺MDM平台开发上线；聚焦主数据规则、映射、质量校验、过渡期规则中心与数据治理沉淀
- 163: 本阶段聚焦流程地图、数据地图、主数据对象和治理规则沉淀；不作为MDM平台开发上线承诺。
- 164: 本阶段聚焦流程地图、数据地图、主数据对象和治理规则沉淀；不作为MDM平台开发上线承诺。
- 165: 本阶段聚焦流程地图、数据地图、主数据对象和治理规则沉淀；不作为MDM平台开发上线承诺。
- 166: 本阶段聚焦流程地图、数据地图、主数据对象和治理规则沉淀；不作为MDM平台开发上线承诺。
- 167: 本阶段聚焦流程地图、数据地图、主数据对象和治理规则沉淀；不作为MDM平台开发上线承诺。
- 168: 本阶段聚焦流程地图、数据地图、主数据对象和治理规则沉淀；不作为MDM平台开发上线承诺。
- 169: 本阶段聚焦流程地图、数据地图、主数据对象和治理规则沉淀；不作为MDM平台开发上线承诺。
- 170: 本阶段聚焦流程地图、数据地图、主数据对象和治理规则沉淀；不作为MDM平台开发上线承诺。
- 171: 本阶段聚焦流程地图、数据地图、主数据对象和治理规则沉淀；不作为MDM平台开发上线承诺。
- 172: 本阶段聚焦流程地图、数据地图、主数据对象和治理规则沉淀；不作为MDM平台开发上线承诺。
- 173: 本阶段聚焦流程地图、数据地图、主数据对象和治理规则沉淀；不作为MDM平台开发上线承诺。
- 174: 本阶段聚焦流程地图、数据地图、主数据对象和治理规则沉淀；不作为MDM平台开发上线承诺。
- 175: 本阶段聚焦流程地图、数据地图、主数据对象和治理规则沉淀；不作为MDM平台开发上线承诺。
- 176: 本阶段聚焦流程地图、数据地图、主数据对象和治理规则沉淀；不作为MDM平台开发上线承诺。
- 177: 本阶段聚焦流程地图、数据地图、主数据对象和治理规则沉淀；不作为MDM平台开发上线承诺。
- 178: 本阶段聚焦流程地图、数据地图、主数据对象和治理规则沉淀；不作为MDM平台开发上线承诺。
- 179: 本阶段聚焦流程地图、数据地图、主数据对象和治理规则沉淀；不作为MDM平台开发上线承诺。
- 180: 本阶段聚焦流程地图、数据地图、主数据对象和治理规则沉淀；不作为MDM平台开发上线承诺。
- 181: 本阶段聚焦流程地图、数据地图、主数据对象和治理规则沉淀；不作为MDM平台开发上线承诺。
- 182: 本阶段聚焦流程地图、数据地图、主数据对象和治理规则沉淀；不作为MDM平台开发上线承诺。
- 183: 本阶段聚焦流程地图、数据地图、主数据对象和治理规则沉淀；不作为MDM平台开发上线承诺。
- 184: 本阶段聚焦流程地图、数据地图、主数据对象和治理规则沉淀；不作为MDM平台开发上线承诺。
- 185: 本阶段聚焦流程地图、数据地图、主数据对象和治理规则沉淀；不作为MDM平台开发上线承诺。
- 186: 本阶段聚焦流程地图、数据地图、主数据对象和治理规则沉淀；如需重启平台建设，须另行形成决策和资源基线。
- 187: 基础设施先行，满足MES测试环境前置条件；AI先支撑数据治理沉淀和知识库
- 188: 支撑业务系统测试环境，区别于WBS5底座终验。
- 189: G4测试环境验收硬指标前置：资源、网络、访问矩阵、备份Agent、首次备份、恢复抽检、监控、账号、日志。
- 190: G4测试环境验收硬指标前置：资源、网络、访问矩阵、备份Agent、首次备份、恢复抽检、监控、账号、日志。
- 191: G4测试环境验收硬指标前置：资源、网络、访问矩阵、备份Agent、首次备份、恢复抽检、监控、账号、日志。
- 192: G4测试环境验收硬指标前置：资源、网络、访问矩阵、备份Agent、首次备份、恢复抽检、监控、账号、日志。
- 193: G4测试环境验收硬指标前置：资源、网络、访问矩阵、备份Agent、首次备份、恢复抽检、监控、账号、日志。
- 194: G4测试环境验收硬指标前置：资源、网络、访问矩阵、备份Agent、首次备份、恢复抽检、监控、账号、日志。
- 195: G4测试环境验收硬指标前置：资源、网络、访问矩阵、备份Agent、首次备份、恢复抽检、监控、账号、日志。
- 196: 自动生成父级摘要，用于修复 WBS 树结构
- 197: 基础设施应早于MES测试环境搭建
- 198: 基础设施应早于MES测试环境搭建
- 199: 基础设施应早于MES测试环境搭建
- 200: 明确计算、存储、网络、安全边界和业务落位；作为后续测试环境和生产环境部署依据。
- 201: 基础设施应早于MES测试环境搭建
- 202: 基础设施应早于MES测试环境搭建
- 203: 自动生成父级摘要，用于修复 WBS 树结构
- 204: 基础设施应早于MES测试环境搭建
- 205: 基础设施应早于MES测试环境搭建
- 206: 覆盖PLM、MES、ERP、QMS、MDM、数据库与关键文件库。
- 207: 形成不可篡改备份、隔离保留、恢复验证的闭环证据。
- 208: 基础设施应早于MES测试环境搭建
- 209: 基础设施应早于MES测试环境搭建
- 210: 基础设施应早于MES测试环境搭建

| ID | WBS | Task | Type | Duration | Start | Finish | Predecessors | Resources | Work |
| --- | --- | --- | --- | --- | --- | --- | --- | --- | --- |
| 211 | 5.4 | 网络与安全 | manual | 31.27d | 2026-08-17 | 2026-10-14 |  | 基础设施工作组 | 344h |
| 212 | 5.4.1 | 机房电力/制冷改造施工与验收 | manual | 15.27d | 2026-08-17 | 2026-09-14 | 36 | 基础设施工作组 | 168h |
| 213 | 5.4.2 | 网络与安全-网络规划 | manual | 5.09d | 2026-08-24 | 2026-09-01 |  | 基础设施工作组 | 56h |
| 214 | 5.4.3 | 网络与安全-安全策略配置 | manual | 5.09d | 2026-09-02 | 2026-09-10 | 213 | 基础设施工作组 | 56h |
| 215 | 5.4.4 | 存储网/备份网/心跳网多平面网络隔离联调 | manual | 5.09d | 2026-09-11 | 2026-09-21 | 214 | 基础设施工作组 | 56h |
| 216 | 5.4.5 | 网络与安全-账号权限基线 | manual | 5.09d | 2026-09-22 | 2026-09-30 | 215 | 基础设施工作组 | 56h |
| 217 | 5.4.6 | 网络与安全-日志审计配置 | manual | 5.09d | 2026-10-01 | 2026-10-09 | 216 | 基础设施工作组 | 56h |
| 218 | 5.4.7 | 网络与安全-验收 | manual | 2.18d | 2026-10-12 | 2026-10-14 | 217 | 基础设施工作组 | 24h |
| 219 | 5.5 | 数据库与中间件 | manual | 37.82d | 2026-09-15 | 2026-11-25 |  | 基础设施工作组 | 416h |
| 220 | 5.5.1 | 数据库与中间件-数据库部署 | manual | 5.09d | 2026-09-15 | 2026-09-23 |  | 基础设施工作组 | 56h |
| 221 | 5.5.2 | 数据库与中间件-中间件部署 | manual | 5.09d | 2026-09-24 | 2026-10-02 | 220 | 基础设施工作组 | 56h |
| 222 | 5.5.3 | Oracle RAC/Data Guard 集群部署与调优 | manual | 7.27d | 2026-10-05 | 2026-10-16 | 221 | 基础设施工作组 | 80h |
| 223 | 5.5.4 | 数据库与中间件-测试环境搭建 | manual | 5.09d | 2026-10-19 | 2026-10-27 | 222 | 基础设施工作组 | 56h |
| 224 | 5.5.5 | 数据库与中间件-预生产环境搭建 | manual | 5.09d | 2026-10-28 | 2026-11-05 | 223 | 基础设施工作组 | 56h |
| 225 | 5.5.6 | 数据库与中间件-生产环境搭建 | manual | 5.09d | 2026-11-06 | 2026-11-16 | 224 | 基础设施工作组 | 56h |
| 226 | 5.5.7 | 数据库容灾切换演练与RPO/RTO验证 | manual | 5.09d | 2026-11-17 | 2026-11-25 | 225 | 基础设施工作组 | 56h |
| 227 | 5.6 | AI服务器与本地模型 | manual | 36.36d | 2026-09-15 | 2026-11-23 |  | 基础设施工作组 | 400h |
| 228 | 5.6.1 | AI服务器与本地模型-硬件到货验收 | manual | 2.18d | 2026-09-15 | 2026-09-17 | 212 | 基础设施工作组 | 24h |
| 229 | 5.6.2 | Ansys Fluent 环境部署与 GPU Solver 适配确认 | manual | 6.55d | 2026-09-18 | 2026-09-30 | 228 | 基础设施工作组 | 72h |
| 230 | 5.6.3 | Ansys Fluent 代表模型 Benchmark 测试与验收 | manual | 5.09d | 2026-10-01 | 2026-10-09 | 229 | 基础设施工作组 | 56h |
| 231 | 5.6.4 | AI服务器与本地模型-模型服务部署 | manual | 5.09d | 2026-10-12 | 2026-10-20 | 230 | 基础设施工作组 | 56h |
| 232 | 5.6.5 | AI服务器与本地模型-代码助手接入 | manual | 5.09d | 2026-10-21 | 2026-10-29 | 231 | 基础设施工作组 | 56h |
| 233 | 5.6.6 | AI服务器与本地模型-知识库原型 | manual | 5.09d | 2026-10-30 | 2026-11-09 | 232 | 基础设施工作组 | 56h |
| 234 | 5.6.7 | AI服务器与本地模型-MDM辅助开发试点 | manual | 5.09d | 2026-11-10 | 2026-11-18 | 233 | 基础设施工作组 | 56h |
| 235 | 5.6.8 | AI服务器与本地模型-试点效果报告 | manual | 2.18d | 2026-11-19 | 2026-11-23 | 234 | 基础设施工作组 | 24h |
| 236 | 5.7 | 虚拟桌面/瘦终端平台 | manual | 22.55d | 2026-10-12 | 2026-11-23 |  | 基础设施工作组 | 248h |
| 237 | 5.7.1 | 虚拟桌面/瘦终端平台-平台部署 | manual | 5.09d | 2026-10-12 | 2026-10-20 |  | 基础设施工作组 | 56h |
| 238 | 5.7.2 | 虚拟桌面/瘦终端平台-镜像模板 | manual | 5.09d | 2026-10-21 | 2026-10-29 | 237 | 基础设施工作组 | 56h |
| 239 | 5.7.3 | 虚拟桌面/瘦终端平台-账号权限 | manual | 5.09d | 2026-10-30 | 2026-11-09 | 238 | 基础设施工作组 | 56h |
| 240 | 5.7.4 | 虚拟桌面/瘦终端平台-试点接入 | manual | 5.09d | 2026-11-10 | 2026-11-18 | 239 | 基础设施工作组 | 56h |
| 241 | 5.7.5 | 虚拟桌面/瘦终端平台-验收 | manual | 2.18d | 2026-11-19 | 2026-11-23 | 240 | 基础设施工作组 | 24h |
| 242 | 5.8 | 运维监控与日志审计 | manual | 25.45d | 2026-11-02 | 2026-12-18 |  | 基础设施工作组 | 280h |
| 243 | 5.8.1 | 运维监控与日志审计-监控指标设计 | manual | 5.09d | 2026-11-02 | 2026-11-10 |  | 基础设施工作组 | 56h |
| 244 | 5.8.2 | 运维监控与日志审计-监控平台配置 | manual | 5.09d | 2026-11-11 | 2026-11-19 | 243 | 基础设施工作组 | 56h |
| 245 | 5.8.3 | 运维监控与日志审计-日志审计联调 | manual | 5.09d | 2026-11-20 | 2026-11-30 | 244 | 基础设施工作组 | 56h |
| 246 | 5.8.4 | 运维监控与日志审计-告警演练 | manual | 5.09d | 2026-12-01 | 2026-12-09 | 245 | 基础设施工作组 | 56h |
| 247 | 5.8.5 | 运维监控与日志审计-运维移交 | manual | 5.09d | 2026-12-10 | 2026-12-18 | 246 | 基础设施工作组 | 56h |
| 248 | 5.9 | 防勒索与统一灾备体系整体验收 | manual | 2.18d | 2027-01-15 | 2027-01-19 |  | 基础设施工作组 | 24h |
| 249 | 5.9.1 | 基础设施防勒索与统一灾备体系整体验收 | manual | 2.18d | 2027-01-15 | 2027-01-19 | 210, 226, 247 | 基础设施工作组 | 24h |
| 250 | 5.10 | 基础设施生产环境就绪 | milestone, manual | 0d | 2027-01-20 | 2027-01-20 | 202, 210, 218, 226, 235, 241, 247, 249 | 基础设施工作组 |  |
| 251 | 6 | PLM基础深化 | manual | 143.27d | 2026-08-03 | 2027-05-04 |  | 信息化项目组 | 1576h |
| 252 | 6.1 | PLM内部调研与问题清单 | manual | 7.27d | 2026-08-03 | 2026-08-14 |  | PLM工作组 | 80h |
| 253 | 6.2 | 图文档管理规范草案 | manual | 5.82d | 2026-08-17 | 2026-08-26 | 252 | PLM工作组 | 64h |
| 254 | 6.3 | EBOM规范草案 | manual | 5.82d | 2026-08-27 | 2026-09-07 | 253 | PLM工作组 | 64h |
| 255 | 6.4 | EBOM到MBOM转换规则草案 | manual | 7.27d | 2026-09-08 | 2026-09-21 | 254 | PLM工作组 | 80h |
| 256 | 6.5 | 工艺文件结构化模板草案 | manual | 7.27d | 2026-09-22 | 2026-10-05 | 255 | PLM工作组 | 80h |
| 257 | 6.6 | ECN/ECO流程方案草案 | manual | 5.82d | 2026-10-06 | 2026-10-15 | 256 | PLM工作组 | 64h |
| 258 | 6.7 | PLM主数据标准映射方案草案 | manual | 4.36d | 2026-10-16 | 2026-10-23 | 257 | PLM工作组 | 48h |
| 259 | 6.8 | PLM-MES集成方案草案 | manual | 4.36d | 2026-10-26 | 2026-11-02 | 258 | PLM工作组 | 48h |
| 260 | 6.9 | 供应商复核与深化蓝图 | manual | 7.27d | 2026-12-01 | 2026-12-14 | 259 | PLM工作组 | 80h |
| 261 | 6.10 | PLM配置/开发方案确认 | manual | 5.82d | 2026-12-15 | 2026-12-24 | 260 | PLM工作组 | 64h |
| 262 | 6.11 | 图文档模块配置/开发 | manual | 8.73d | 2026-12-25 | 2027-01-11 | 261 | PLM工作组 | 96h |
| 263 | 6.12 | EBOM规范化配置/开发 | manual | 8.73d | 2027-01-12 | 2027-01-27 | 262 | PLM工作组 | 96h |
| 264 | 6.13 | 工艺结构化配置/开发 | manual | 10.91d | 2027-01-28 | 2027-02-17 | 263 | PLM工作组 | 120h |
| 265 | 6.14 | ECN/ECO流程配置/开发 | manual | 8.73d | 2027-02-18 | 2027-03-05 | 264 | PLM工作组 | 96h |
| 266 | 6.15 | PLM主数据标准映射联调 | manual | 7.27d | 2027-03-08 | 2027-03-19 | 265 | PLM工作组 | 80h |
| 267 | 6.16 | PLM-MES接口开发联调 | manual | 7.27d | 2027-03-22 | 2027-04-02 | 266 | PLM工作组 | 80h |
| 268 | 6.17 | PLM系统测试 | manual | 7.27d | 2027-04-05 | 2027-04-16 | 267 | PLM工作组 | 80h |
| 269 | 6.18 | PLM用户培训 | manual | 3.64d | 2027-04-19 | 2027-04-23 | 268 | PLM工作组 | 40h |
| 270 | 6.18.1 | PLM正式上线 | milestone, manual | 0d | 2027-04-26 | 2027-04-26 |  | PLM工作组 |  |
| 271 | 6.19 | PLM基础深化验收准备 | manual | 3.64d | 2027-04-27 | 2027-05-03 | 270 | PLM工作组 | 40h |
| 272 | 6.20 | PLM基础深化验收 | milestone, manual | 0d | 2027-05-04 | 2027-05-04 | 271 | PLM工作组 |  |
| 273 | 7 | ERP/OA补强 | manual | 133.09d | 2026-08-03 | 2027-04-14 |  | 信息化项目组 | 1464h |
| 274 | 7.1 | ERP/OA现状与差距分析 | manual | 7.27d | 2026-08-03 | 2026-08-14 |  | ERP·OA工作组 | 80h |
| 275 | 7.2 | MRP补强需求规格 | manual | 7.27d | 2026-08-17 | 2026-08-28 | 274 | ERP·OA工作组 | 80h |
| 276 | 7.3 | 采购计划补强需求规格 | manual | 5.82d | 2026-08-31 | 2026-09-09 | 275 | ERP·OA工作组 | 64h |
| 277 | 7.4 | 生产计划补强需求规格 | manual | 5.82d | 2026-09-10 | 2026-09-21 | 276 | ERP·OA工作组 | 64h |
| 278 | 7.5 | OA待办与流程集成需求 | manual | 4.36d | 2026-09-22 | 2026-09-29 | 277 | ERP·OA工作组 | 48h |
| 279 | 7.5.1 | ERP/OA需求冻结 | milestone, manual | 0d | 2026-09-30 | 2026-09-30 |  | ERP·OA工作组 |  |
| 280 | 7.6 | ERP主数据标准映射方案 | manual | 5.82d | 2026-09-30 | 2026-10-09 | 278 | ERP·OA工作组 | 64h |

Notes:
- 211: 自动生成父级摘要，用于修复 WBS 树结构
- 212: 必须在GPU服务器到货前完成；覆盖UPS扩容、PDU、机柜承重、散热改造。
- 213: 基础设施应早于MES测试环境搭建
- 214: 基础设施应早于MES测试环境搭建
- 215: 覆盖存储网、备份网、心跳网，避免业务网与管理/备份/集群网络混用。
- 216: 基础设施应早于MES测试环境搭建
- 217: 基础设施应早于MES测试环境搭建
- 218: 基础设施应早于MES测试环境搭建
- 219: 自动生成父级摘要，用于修复 WBS 树结构
- 220: 基础设施应早于MES测试环境搭建
- 221: 基础设施应早于MES测试环境搭建
- 222: 作为ERP、MES、PLM等关键数据库集群能力和容灾能力基础。
- 223: 基础设施应早于MES测试环境搭建
- 224: 基础设施应早于MES测试环境搭建
- 225: 基础设施应早于MES测试环境搭建
- 226: 验证数据库级容灾切换、恢复点目标和恢复时间目标。
- 227: 自动生成父级摘要，用于修复 WBS 树结构
- 228: 基础设施应早于MES测试环境搭建
- 229: 用于热分布、抽壳湍流模型、复合材料成型工装等仿真场景的GPU求解能力确认。
- 230: 以代表性模型验证GPU Solver加速效果、稳定性、显存占用和并发能力。
- 231: 基础设施应早于MES测试环境搭建
- 232: 基础设施应早于MES测试环境搭建
- 233: 基础设施应早于MES测试环境搭建
- 234: 基础设施应早于MES测试环境搭建
- 235: 基础设施应早于MES测试环境搭建
- 236: 自动生成父级摘要，用于修复 WBS 树结构
- 237: 基础设施应早于MES测试环境搭建
- 238: 基础设施应早于MES测试环境搭建
- 239: 基础设施应早于MES测试环境搭建
- 240: 基础设施应早于MES测试环境搭建
- 241: 基础设施应早于MES测试环境搭建
- 242: 自动生成父级摘要，用于修复 WBS 树结构
- 243: 基础设施应早于MES测试环境搭建
- 244: 基础设施应早于MES测试环境搭建
- 245: 基础设施应早于MES测试环境搭建
- 246: 基础设施应早于MES测试环境搭建
- 247: 基础设施应早于MES测试环境搭建
- 248: 汇总不可变备份、防勒索、容灾恢复与统一灾备体系的整体能力验收。
- 249: 作为基础设施生产环境就绪前的关键阶段门。
- 251: 供应商确定前只做内部调研和方案，深化以实际开发集成进度为准
- 252: 供应商未定前只做内部调研和方案
- 253: 供应商未定前只做内部调研和方案
- 254: 供应商未定前只做内部调研和方案
- 255: 供应商未定前只做内部调研和方案
- 256: 供应商未定前只做内部调研和方案
- 257: 供应商未定前只做内部调研和方案
- 258: 按最终执行版统一口径：本期不使用MDM平台联调表述，改为主数据标准映射/一致性校验/规则接口校验。
- 259: 供应商未定前只做内部调研和方案
- 260: 最好全有，以实际开发和集成进度为准
- 261: 最好全有，以实际开发和集成进度为准
- 262: 最好全有，以实际开发和集成进度为准
- 263: 最好全有，以实际开发和集成进度为准
- 264: 最好全有，以实际开发和集成进度为准
- 265: 最好全有，以实际开发和集成进度为准
- 266: 按最终执行版统一口径：本期不使用MDM平台联调表述，改为主数据标准映射/一致性校验/规则接口校验。
- 267: 最好全有，以实际开发和集成进度为准
- 268: 最好全有，以实际开发和集成进度为准
- 269: 最好全有，以实际开发和集成进度为准
- 270: 最好全有，以实际开发和集成进度为准
- 271: 最好全有，以实际开发和集成进度为准
- 272: 最好全有，以实际开发和集成进度为准
- 273: 现有用友U8；包含MRP、采购计划、生产计划补强；WBS2已补充ERP服务器扩容与OA系统采购，WBS7继续体现ERP/OA补强实施与接口改造。
- 274: 已有用友U8；2026年不只做接口，还做MRP/采购计划/生产计划补强
- 275: 已有用友U8；2026年不只做接口，还做MRP/采购计划/生产计划补强
- 276: 已有用友U8；2026年不只做接口，还做MRP/采购计划/生产计划补强
- 277: 已有用友U8；2026年不只做接口，还做MRP/采购计划/生产计划补强
- 278: 已有用友U8；2026年不只做接口，还做MRP/采购计划/生产计划补强
- 279: 已有用友U8；2026年不只做接口，还做MRP/采购计划/生产计划补强
- 280: 按最终执行版统一口径：本期不使用MDM平台联调表述，改为主数据标准映射/一致性校验/规则接口校验。

| ID | WBS | Task | Type | Duration | Start | Finish | Predecessors | Resources | Work |
| --- | --- | --- | --- | --- | --- | --- | --- | --- | --- |
| 281 | 7.7 | ERP-MES接口方案 | manual | 5.82d | 2026-10-12 | 2026-10-21 | 280 | ERP·OA工作组 | 64h |
| 282 | 7.7.1 | ERP/OA接口方案评审通过 | milestone, manual | 0d | 2026-10-22 | 2026-10-22 |  | ERP·OA工作组 |  |
| 283 | 7.8 | MRP模块配置/开发 | manual | 14.55d | 2026-10-22 | 2026-11-18 | 281 | ERP·OA工作组 | 160h |
| 284 | 7.9 | 采购计划模块配置/开发 | manual | 10.91d | 2026-11-19 | 2026-12-09 | 283 | ERP·OA工作组 | 120h |
| 285 | 7.10 | 生产计划模块配置/开发 | manual | 10.91d | 2026-12-10 | 2026-12-30 | 284 | ERP·OA工作组 | 120h |
| 286 | 7.11 | OA待办接口配置/开发 | manual | 7.27d | 2026-12-31 | 2027-01-13 | 285 | ERP·OA工作组 | 80h |
| 287 | 7.12 | ERP/OA单元测试 | manual | 5.82d | 2027-01-14 | 2027-01-25 | 286 | ERP·OA工作组 | 64h |
| 288 | 7.13 | ERP主数据一致性联调 | manual | 5.82d | 2027-01-26 | 2027-02-04 | 287 | ERP·OA工作组 | 64h |
| 289 | 7.14 | ERP-MES联调 | manual | 7.27d | 2027-02-05 | 2027-02-18 | 288 | ERP·OA工作组 | 80h |
| 290 | 7.14.1 | ERP/OA集成测试完成 | milestone, manual | 0d | 2027-02-19 | 2027-02-19 |  | ERP·OA工作组 |  |
| 291 | 7.15 | ERP/OA用户培训 | manual | 3.64d | 2027-02-19 | 2027-02-25 | 289 | ERP·OA工作组 | 40h |
| 292 | 7.16 | ERP/OA补强验收 | manual | 3.64d | 2027-02-26 | 2027-03-04 | 291 | ERP·OA工作组 | 40h |
| 293 | 7.16.1 | ERP/OA正式上线 | milestone, manual | 0d | 2027-03-05 | 2027-03-05 | 292 | ERP·OA工作组 |  |
| 294 | 7.17 | ERP扩容影响分析与停机窗口审批 | manual | 3.64d | 2027-03-05 | 2027-03-11 |  | ERP·OA工作组 | 40h |
| 295 | 7.18 | ERP扩容割接演练与回退方案审批 | manual | 4.36d | 2027-03-12 | 2027-03-19 | 294 | ERP·OA工作组 | 48h |
| 296 | 7.19 | ERP关键业务场景验证 | manual | 3.64d | 2027-03-22 | 2027-03-26 | 295 | ERP·OA工作组 | 40h |
| 297 | 7.20 | ERP扩容后观察期 | manual | 7.27d | 2027-03-29 | 2027-04-09 | 296 | ERP·OA工作组 | 80h |
| 298 | 7.21 | OA统一入口定位确认 | manual | 3.64d | 2026-08-17 | 2026-08-21 |  | ERP·OA工作组 | 40h |
| 299 | 7.22 | 新老OA接口兼容性及SSO方案POC | manual | 7.27d | 2026-11-09 | 2026-11-20 | 298, 22 | ERP·OA工作组 | 80h |
| 300 | 7.23 | OA供应商接口能力确认 | manual | 3.64d | 2026-11-23 | 2026-11-27 | 299 | ERP·OA工作组 | 40h |
| 301 | 7.24 | OA接口规格冻结 | milestone, manual | 0d | 2026-12-04 | 2026-12-04 | 300 | ERP·OA工作组 |  |
| 302 | 7.25 | OA失效旁路与补偿方案 | manual | 3.64d | 2026-12-07 | 2026-12-11 | 301 | ERP·OA工作组 | 40h |
| 303 | 8 | MES建设与QMS低代码平台 | manual | 137.45d | 2026-09-01 | 2027-05-21 |  | 信息化项目组 | 1512h |
| 304 | 8.1 | MES内部需求清单编制 | manual | 8.73d | 2026-09-01 | 2026-09-16 |  | MES工作组 | 96h |
| 305 | 8.2 | MES内部初版蓝图编制 | manual | 10.91d | 2026-09-17 | 2026-10-07 | 304 | MES工作组 | 120h |
| 306 | 8.3 | MES蓝图内部评审 | manual | 2.18d | 2026-10-08 | 2026-10-12 | 305 | MES工作组 | 24h |
| 307 | 8.4 | MES供应商复核蓝图 | manual | 7.27d | 2026-10-13 | 2026-10-26 | 306 | MES工作组 | 80h |
| 308 | 8.5 | MES蓝图评审通过 | milestone, manual | 0d | 2026-10-30 | 2026-10-30 | 307 | MES工作组 |  |
| 309 | 8.6 | 主数据接收与基础维护 | manual | 22.55d | 2026-11-02 | 2026-12-14 |  | MES工作组 | 248h |
| 310 | 8.6.1 | 主数据接收与基础维护-详细需求确认 | manual | 3.64d | 2026-11-02 | 2026-11-06 |  | MES工作组 | 40h |
| 311 | 8.6.2 | 主数据接收与基础维护-详细设计 | manual | 3.64d | 2026-11-09 | 2026-11-13 | 310 | MES工作组 | 40h |
| 312 | 8.6.3 | 主数据接收与基础维护-配置/开发 | manual | 8.73d | 2026-11-16 | 2026-12-01 | 311 | MES工作组 | 96h |
| 313 | 8.6.4 | 主数据接收与基础维护-单元测试 | manual | 3.64d | 2026-12-02 | 2026-12-08 | 312 | MES工作组 | 40h |
| 314 | 8.6.5 | 主数据接收与基础维护-缺陷修复 | manual | 2.91d | 2026-12-09 | 2026-12-14 | 313 | MES工作组 | 32h |
| 315 | 8.7 | 工艺管理/轻量MBOM | manual | 22.55d | 2026-11-09 | 2026-12-21 |  | MES工作组 | 248h |
| 316 | 8.7.1 | 工艺管理/轻量MBOM-详细需求确认 | manual | 3.64d | 2026-11-09 | 2026-11-13 |  | MES工作组 | 40h |
| 317 | 8.7.2 | 工艺管理/轻量MBOM-详细设计 | manual | 3.64d | 2026-11-16 | 2026-11-20 | 316 | MES工作组 | 40h |
| 318 | 8.7.3 | 工艺管理/轻量MBOM-配置/开发 | manual | 8.73d | 2026-11-23 | 2026-12-08 | 317 | MES工作组 | 96h |
| 319 | 8.7.4 | 工艺管理/轻量MBOM-单元测试 | manual | 3.64d | 2026-12-09 | 2026-12-15 | 318 | MES工作组 | 40h |
| 320 | 8.7.5 | 工艺管理/轻量MBOM-缺陷修复 | manual | 2.91d | 2026-12-16 | 2026-12-21 | 319 | MES工作组 | 32h |
| 321 | 8.8 | 生产计划管理 | manual | 22.55d | 2026-11-12 | 2026-12-24 |  | MES工作组 | 248h |
| 322 | 8.8.1 | 生产计划管理-详细需求确认 | manual | 3.64d | 2026-11-12 | 2026-11-18 |  | MES工作组 | 40h |
| 323 | 8.8.2 | 生产计划管理-详细设计 | manual | 3.64d | 2026-11-19 | 2026-11-25 | 322 | MES工作组 | 40h |
| 324 | 8.8.3 | 生产计划管理-配置/开发 | manual | 8.73d | 2026-11-26 | 2026-12-11 | 323 | MES工作组 | 96h |
| 325 | 8.8.4 | 生产计划管理-单元测试 | manual | 3.64d | 2026-12-14 | 2026-12-18 | 324 | MES工作组 | 40h |
| 326 | 8.8.5 | 生产计划管理-缺陷修复 | manual | 2.91d | 2026-12-21 | 2026-12-24 | 325 | MES工作组 | 32h |
| 327 | 8.9 | 执行报工/工序流转 | manual | 22.55d | 2026-11-17 | 2026-12-29 |  | MES工作组 | 248h |
| 328 | 8.9.1 | 执行报工/工序流转-详细需求确认 | manual | 3.64d | 2026-11-17 | 2026-11-23 |  | MES工作组 | 40h |
| 329 | 8.9.2 | 执行报工/工序流转-详细设计 | manual | 3.64d | 2026-11-24 | 2026-11-30 | 328 | MES工作组 | 40h |
| 330 | 8.9.3 | 执行报工/工序流转-配置/开发 | manual | 8.73d | 2026-12-01 | 2026-12-16 | 329 | MES工作组 | 96h |
| 331 | 8.9.4 | 执行报工/工序流转-单元测试 | manual | 3.64d | 2026-12-17 | 2026-12-23 | 330 | MES工作组 | 40h |
| 332 | 8.9.5 | 执行报工/工序流转-缺陷修复 | manual | 2.91d | 2026-12-24 | 2026-12-29 | 331 | MES工作组 | 32h |
| 333 | 8.10 | 仓储管理 | manual | 22.55d | 2026-11-23 | 2027-01-04 |  | MES工作组 | 248h |
| 334 | 8.10.1 | 仓储管理-详细需求确认 | manual | 3.64d | 2026-11-23 | 2026-11-27 |  | MES工作组 | 40h |
| 335 | 8.10.2 | 仓储管理-详细设计 | manual | 3.64d | 2026-11-30 | 2026-12-04 | 334 | MES工作组 | 40h |
| 336 | 8.10.3 | 仓储管理-配置/开发 | manual | 8.73d | 2026-12-07 | 2026-12-22 | 335 | MES工作组 | 96h |
| 337 | 8.10.4 | 仓储管理-单元测试 | manual | 3.64d | 2026-12-23 | 2026-12-29 | 336 | MES工作组 | 40h |
| 338 | 8.10.5 | 仓储管理-缺陷修复 | manual | 2.91d | 2026-12-30 | 2027-01-04 | 337 | MES工作组 | 32h |
| 339 | 8.11 | 工装工具管理 | manual | 22.55d | 2026-11-27 | 2027-01-08 |  | MES工作组 | 248h |
| 340 | 8.11.1 | 工装工具管理-详细需求确认 | manual | 3.64d | 2026-11-27 | 2026-12-03 |  | MES工作组 | 40h |
| 341 | 8.11.2 | 工装工具管理-详细设计 | manual | 3.64d | 2026-12-04 | 2026-12-10 | 340 | MES工作组 | 40h |
| 342 | 8.11.3 | 工装工具管理-配置/开发 | manual | 8.73d | 2026-12-11 | 2026-12-28 | 341 | MES工作组 | 96h |
| 343 | 8.11.4 | 工装工具管理-单元测试 | manual | 3.64d | 2026-12-29 | 2027-01-04 | 342 | MES工作组 | 40h |
| 344 | 8.11.5 | 工装工具管理-缺陷修复 | manual | 2.91d | 2027-01-05 | 2027-01-08 | 343 | MES工作组 | 32h |
| 345 | 8.12 | 质量基础管理 | manual | 22.55d | 2026-12-02 | 2027-01-13 |  | MES工作组 | 248h |
| 346 | 8.12.1 | 质量基础管理-详细需求确认 | manual | 3.64d | 2026-12-02 | 2026-12-08 |  | MES工作组 | 40h |
| 347 | 8.12.2 | 质量基础管理-详细设计 | manual | 3.64d | 2026-12-09 | 2026-12-15 | 346 | MES工作组 | 40h |
| 348 | 8.12.3 | 质量基础管理-配置/开发 | manual | 8.73d | 2026-12-16 | 2026-12-31 | 347 | MES工作组 | 96h |
| 349 | 8.12.4 | 质量基础管理-单元测试 | manual | 3.64d | 2027-01-01 | 2027-01-07 | 348 | MES工作组 | 40h |
| 350 | 8.12.5 | 质量基础管理-缺陷修复 | manual | 2.91d | 2027-01-08 | 2027-01-13 | 349 | MES工作组 | 32h |

Notes:
- 281: 已有用友U8；2026年不只做接口，还做MRP/采购计划/生产计划补强
- 282: 已有用友U8；2026年不只做接口，还做MRP/采购计划/生产计划补强
- 283: 已有用友U8；2026年不只做接口，还做MRP/采购计划/生产计划补强
- 284: 已有用友U8；2026年不只做接口，还做MRP/采购计划/生产计划补强
- 285: 已有用友U8；2026年不只做接口，还做MRP/采购计划/生产计划补强
- 286: 已有用友U8；2026年不只做接口，还做MRP/采购计划/生产计划补强
- 287: 已有用友U8；2026年不只做接口，还做MRP/采购计划/生产计划补强
- 288: 按最终执行版统一口径：本期不使用MDM平台联调表述，改为主数据标准映射/一致性校验/规则接口校验。
- 289: 已有用友U8；2026年不只做接口，还做MRP/采购计划/生产计划补强
- 290: 已有用友U8；2026年不只做接口，还做MRP/采购计划/生产计划补强
- 291: 已有用友U8；2026年不只做接口，还做MRP/采购计划/生产计划补强
- 292: 已有用友U8；2026年不只做接口，还做MRP/采购计划/生产计划补强
- 293: 已有用友U8；2026年不只做接口，还做MRP/采购计划/生产计划补强
- 294: ERP扩容安全网，必须在割接前完成。
- 295: ERP扩容不得无回退上线。
- 296: 覆盖U8关键业务链路和性能验证。
- 297: 观察期结束后才能释放扩容稳定运行结论。
- 298: 明确OA作为统一入口、待办、流程或信息门户的定位。
- 299: 接口规格冻结前必须完成。
- 300: 确认OA供应商接口能力，不得凭想象冻结接口。
- 301: OA 9月只能冻结跨系统业务流转蓝图；接口规格必须在供应商进场、接口能力确认和POC后冻结。
- 302: OA不可用时保证关键流程有旁路和补偿机制。
- 303: MES一期开到2027年4月底，QMS纳入MES建设下的子项目
- 304: 供应商未定期间内部先做初版蓝图，进场后复核
- 305: 供应商未定期间内部先做初版蓝图，进场后复核
- 306: 供应商未定期间内部先做初版蓝图，进场后复核
- 307: 供应商未定期间内部先做初版蓝图，进场后复核
- 308: 供应商未定期间内部先做初版蓝图，进场后复核
- 309: 自动生成父级摘要，用于修复 WBS 树结构
- 310: MES一期范围；QMS作为MES建设下子项目，2027上半年完成基础能力
- 311: MES一期范围；QMS作为MES建设下子项目，2027上半年完成基础能力
- 312: MES一期范围；QMS作为MES建设下子项目，2027上半年完成基础能力
- 313: MES一期范围；QMS作为MES建设下子项目，2027上半年完成基础能力
- 314: MES一期范围；QMS作为MES建设下子项目，2027上半年完成基础能力
- 315: 自动生成父级摘要，用于修复 WBS 树结构
- 316: MES一期范围；QMS作为MES建设下子项目，2027上半年完成基础能力
- 317: MES一期范围；QMS作为MES建设下子项目，2027上半年完成基础能力
- 318: MES一期范围；QMS作为MES建设下子项目，2027上半年完成基础能力
- 319: MES一期范围；QMS作为MES建设下子项目，2027上半年完成基础能力
- 320: MES一期范围；QMS作为MES建设下子项目，2027上半年完成基础能力
- 321: 自动生成父级摘要，用于修复 WBS 树结构
- 322: MES一期范围；QMS作为MES建设下子项目，2027上半年完成基础能力
- 323: MES一期范围；QMS作为MES建设下子项目，2027上半年完成基础能力
- 324: MES一期范围；QMS作为MES建设下子项目，2027上半年完成基础能力
- 325: MES一期范围；QMS作为MES建设下子项目，2027上半年完成基础能力
- 326: MES一期范围；QMS作为MES建设下子项目，2027上半年完成基础能力
- 327: 自动生成父级摘要，用于修复 WBS 树结构
- 328: MES一期范围；QMS作为MES建设下子项目，2027上半年完成基础能力
- 329: MES一期范围；QMS作为MES建设下子项目，2027上半年完成基础能力
- 330: MES一期范围；QMS作为MES建设下子项目，2027上半年完成基础能力
- 331: MES一期范围；QMS作为MES建设下子项目，2027上半年完成基础能力
- 332: MES一期范围；QMS作为MES建设下子项目，2027上半年完成基础能力
- 333: 自动生成父级摘要，用于修复 WBS 树结构
- 334: MES一期范围；QMS作为MES建设下子项目，2027上半年完成基础能力
- 335: MES一期范围；QMS作为MES建设下子项目，2027上半年完成基础能力
- 336: MES一期范围；QMS作为MES建设下子项目，2027上半年完成基础能力
- 337: MES一期范围；QMS作为MES建设下子项目，2027上半年完成基础能力
- 338: MES一期范围；QMS作为MES建设下子项目，2027上半年完成基础能力
- 339: 自动生成父级摘要，用于修复 WBS 树结构
- 340: MES一期范围；QMS作为MES建设下子项目，2027上半年完成基础能力
- 341: MES一期范围；QMS作为MES建设下子项目，2027上半年完成基础能力
- 342: MES一期范围；QMS作为MES建设下子项目，2027上半年完成基础能力
- 343: MES一期范围；QMS作为MES建设下子项目，2027上半年完成基础能力
- 344: MES一期范围；QMS作为MES建设下子项目，2027上半年完成基础能力
- 345: 自动生成父级摘要，用于修复 WBS 树结构
- 346: MES一期范围；QMS作为MES建设下子项目，2027上半年完成基础能力
- 347: MES一期范围；QMS作为MES建设下子项目，2027上半年完成基础能力
- 348: MES一期范围；QMS作为MES建设下子项目，2027上半年完成基础能力
- 349: MES一期范围；QMS作为MES建设下子项目，2027上半年完成基础能力
- 350: MES一期范围；QMS作为MES建设下子项目，2027上半年完成基础能力

| ID | WBS | Task | Type | Duration | Start | Finish | Predecessors | Resources | Work |
| --- | --- | --- | --- | --- | --- | --- | --- | --- | --- |
| 351 | 8.13 | 生产进度看板 | manual | 22.55d | 2026-12-07 | 2027-01-18 |  | MES工作组 | 248h |
| 352 | 8.13.1 | 生产进度看板-详细需求确认 | manual | 3.64d | 2026-12-07 | 2026-12-11 |  | MES工作组 | 40h |
| 353 | 8.13.2 | 生产进度看板-详细设计 | manual | 3.64d | 2026-12-14 | 2026-12-18 | 352 | MES工作组 | 40h |
| 354 | 8.13.3 | 生产进度看板-配置/开发 | manual | 8.73d | 2026-12-21 | 2027-01-05 | 353 | MES工作组 | 96h |
| 355 | 8.13.4 | 生产进度看板-单元测试 | manual | 3.64d | 2027-01-06 | 2027-01-12 | 354 | MES工作组 | 40h |
| 356 | 8.13.5 | 生产进度看板-缺陷修复 | manual | 2.91d | 2027-01-13 | 2027-01-18 | 355 | MES工作组 | 32h |
| 357 | 8.14 | PLM | manual | 19.64d | 2026-12-14 | 2027-01-19 |  | MES工作组 | 216h |
| 358 | 8.14.1 | PLM-MES接口-详细需求确认 | manual | 3.64d | 2026-12-14 | 2026-12-18 |  | MES工作组 | 40h |
| 359 | 8.14.2 | PLM-MES接口-详细设计 | manual | 3.64d | 2026-12-21 | 2026-12-25 | 358 | MES工作组 | 40h |
| 360 | 8.14.3 | PLM-MES接口-配置/开发 | manual | 5.82d | 2026-12-28 | 2027-01-06 | 359 | MES工作组 | 64h |
| 361 | 8.14.4 | PLM-MES接口-单元测试 | manual | 3.64d | 2027-01-07 | 2027-01-13 | 360 | MES工作组 | 40h |
| 362 | 8.14.5 | PLM-MES接口-缺陷修复 | manual | 2.91d | 2027-01-14 | 2027-01-19 | 361 | MES工作组 | 32h |
| 363 | 8.15 | ERP | manual | 19.64d | 2026-12-17 | 2027-01-22 |  | MES工作组 | 216h |
| 364 | 8.15.1 | ERP-MES接口-详细需求确认 | manual | 3.64d | 2026-12-17 | 2026-12-23 |  | MES工作组 | 40h |
| 365 | 8.15.2 | ERP-MES接口-详细设计 | manual | 3.64d | 2026-12-24 | 2026-12-30 | 364 | MES工作组 | 40h |
| 366 | 8.15.3 | ERP-MES接口-配置/开发 | manual | 5.82d | 2026-12-31 | 2027-01-11 | 365 | MES工作组 | 64h |
| 367 | 8.15.4 | ERP-MES接口-单元测试 | manual | 3.64d | 2027-01-12 | 2027-01-18 | 366 | MES工作组 | 40h |
| 368 | 8.15.5 | ERP-MES接口-缺陷修复 | manual | 2.91d | 2027-01-19 | 2027-01-22 | 367 | MES工作组 | 32h |
| 369 | 8.16 | QMS低代码平台 | manual | 32.73d | 2026-12-22 | 2027-02-22 |  | MES工作组 | 360h |
| 370 | 8.16.1 | QMS低代码平台-QMS范围确认 | manual | 4.36d | 2026-12-22 | 2026-12-29 |  | MES工作组 | 48h |
| 371 | 8.16.2 | QMS低代码平台-低代码平台方案设计 | manual | 4.36d | 2026-12-30 | 2027-01-06 | 370 | MES工作组 | 48h |
| 372 | 8.16.3 | QMS低代码平台-质量流程表单配置 | manual | 8.73d | 2027-01-07 | 2027-01-22 | 371 | MES工作组 | 96h |
| 373 | 8.16.4 | QMS低代码平台-质量台账与审批流配置 | manual | 7.27d | 2027-01-25 | 2027-02-05 | 372 | MES工作组 | 80h |
| 374 | 8.16.5 | QMS低代码平台-QMS测试 | manual | 4.36d | 2027-02-08 | 2027-02-15 | 373 | MES工作组 | 48h |
| 375 | 8.16.6 | QMS低代码平台-QMS基础能力验收 | manual | 3.64d | 2027-02-16 | 2027-02-22 | 374 | MES工作组 | 40h |
| 376 | 8.17 | MES | manual | 19.64d | 2026-12-28 | 2027-02-02 |  | MES工作组 | 216h |
| 377 | 8.17.1 | MES-QMS接口-详细需求确认 | manual | 3.64d | 2026-12-28 | 2027-01-01 |  | MES工作组 | 40h |
| 378 | 8.17.2 | MES-QMS接口-详细设计 | manual | 3.64d | 2027-01-04 | 2027-01-08 | 377 | MES工作组 | 40h |
| 379 | 8.17.3 | MES-QMS接口-配置/开发 | manual | 5.82d | 2027-01-11 | 2027-01-20 | 378 | MES工作组 | 64h |
| 380 | 8.17.4 | MES-QMS接口-单元测试 | manual | 3.64d | 2027-01-21 | 2027-01-27 | 379 | MES工作组 | 40h |
| 381 | 8.17.5 | MES-QMS接口-缺陷修复 | manual | 2.91d | 2027-01-28 | 2027-02-02 | 380 | MES工作组 | 32h |
| 382 | 8.99 | MES一期系统集成测试 | manual | 43.64d | 2027-03-01 | 2027-05-21 |  | MES工作组 | 480h |
| 383 | 8.99.1 | MES一期系统集成测试 | manual | 10.91d | 2027-03-01 | 2027-03-19 |  | MES工作组 | 120h |
| 384 | 8.99.2 | MES一期用户培训材料编制 | manual | 3.64d | 2027-03-22 | 2027-03-26 | 383 | MES工作组 | 40h |
| 385 | 8.99.3 | MES一期关键用户培训 | manual | 5.82d | 2027-03-29 | 2027-04-07 | 384 | MES工作组 | 64h |
| 386 | 8.99.4 | MES一期上线前风险缓冲 | manual | 7.27d | 2027-04-08 | 2027-04-21 | 385 | MES工作组 | 80h |
| 387 | 8.99.5 | MES一期试运行开始 | milestone, manual | 0d | 2027-04-22 | 2027-04-22 | 386 | MES工作组 |  |
| 388 | 8.99.6 | MES一期试运行与问题整改 | manual | 10.91d | 2027-04-23 | 2027-05-13 | 387 | MES工作组 | 120h |
| 389 | 8.99.7 | MES一期正式上线 | milestone, manual | 0d | 2027-05-14 | 2027-05-14 | 388 | MES工作组 |  |
| 390 | 8.99.8 | MES一期验收 | manual | 3.64d | 2027-05-17 | 2027-05-21 | 389 | MES工作组 | 40h |
| 391 | 9 | 全系统集成联调与现场推广 | manual | 98.91d | 2027-04-03 | 2027-10-08 |  | 信息化项目组 | 1088h |
| 392 | 9.0 | 全系统联调启动准备 | manual | 13.82d | 2027-04-03 | 2027-04-28 |  | 信息化项目组 | 152h |
| 393 | 9.0.1 | 核心招采联调准备确认 | milestone, manual | 0d | 2027-04-03 | 2027-04-03 | 24 | 信息化项目组 |  |
| 394 | 9.0.2 | 测试环境资源与访问矩阵确认 | manual | 2.18d | 2027-04-06 | 2027-04-08 | 195 | 信息化项目组 | 24h |
| 395 | 9.0.3 | 主数据V1.1联调版冻结确认 | milestone, manual | 0d | 2027-04-09 | 2027-04-09 | 159 | 信息化项目组 |  |
| 396 | 9.0.4 | 接口规格冻结与版本锁定 | milestone, manual | 0d | 2027-04-12 | 2027-04-12 | 157 | 信息化项目组 |  |
| 397 | 9.0.5 | 集成过渡期规则中心可用确认 | manual | 2.18d | 2027-04-13 | 2027-04-15 | 184 | 信息化项目组 | 24h |
| 398 | 9.0.6 | 备份Agent安装与首次备份验证 | manual | 2.18d | 2027-04-16 | 2027-04-20 | 195 | 信息化项目组 | 24h |
| 399 | 9.0.7 | 关键接口冒烟测试 | manual | 2.18d | 2027-04-21 | 2027-04-23 | 393, 394, 395, 396, 397, 398 | 信息化项目组 | 24h |
| 400 | 9.0.8 | WBS9联调启动评审 | manual | 2.18d | 2027-04-26 | 2027-04-28 | 393, 394, 395, 396, 397, 398, 399 | 信息化项目组 | 24h |
| 401 | 9.1 | PLM主数据标准映射联调 | manual | 7.27d | 2027-05-03 | 2027-05-14 | 400 | 信息化项目组 | 80h |
| 402 | 9.2 | ERP主数据一致性联调 | manual | 7.27d | 2027-05-17 | 2027-05-28 | 401 | 信息化项目组 | 80h |
| 403 | 9.3 | MES主数据一致性校验 | manual | 7.27d | 2027-05-31 | 2027-06-11 | 402 | 信息化项目组 | 80h |
| 404 | 9.4 | PLM-MES集成联调 | manual | 8.73d | 2027-06-14 | 2027-06-29 | 403 | 信息化项目组 | 96h |
| 405 | 9.5 | ERP-MES集成联调 | manual | 8.73d | 2027-06-30 | 2027-07-15 | 404 | 信息化项目组 | 96h |
| 406 | 9.6 | MES-QMS集成联调 | manual | 7.27d | 2027-07-16 | 2027-07-29 | 405 | 信息化项目组 | 80h |
| 407 | 9.7 | 跨系统业务场景测试-订单到计划 | manual | 5.82d | 2027-07-30 | 2027-08-10 | 406 | 信息化项目组 | 64h |
| 408 | 9.8 | 跨系统业务场景测试-工艺到执行 | manual | 5.82d | 2027-08-11 | 2027-08-20 | 407 | 信息化项目组 | 64h |
| 409 | 9.9 | 跨系统业务场景测试-质量闭环 | manual | 5.82d | 2027-08-23 | 2027-09-01 | 408 | 信息化项目组 | 64h |
| 410 | 9.10 | 跨系统业务场景测试-物料齐套 | manual | 5.82d | 2027-09-02 | 2027-09-13 | 409 | 信息化项目组 | 64h |
| 411 | 9.11 | 全系统集成联调问题整改 | manual | 10.91d | 2027-09-14 | 2027-10-04 | 410 | 信息化项目组 | 120h |
| 412 | 9.12 | 全系统集成联调完成 | milestone, manual | 0d | 2027-10-05 | 2027-10-05 | 411 | 信息化项目组 |  |
| 413 | 9.13 | 生产现场推广方案 | manual | 5.82d | 2027-10-06 | 2027-10-15 | 412 | 信息化项目组 | 64h |
| 414 | 9.14 | 试点产线推广 | manual | 10.91d | 2027-10-18 | 2027-11-05 | 413 | 信息化项目组 | 120h |
| 415 | 9.15 | 多部门现场培训 | manual | 7.27d | 2027-11-08 | 2027-11-19 | 414 | 信息化项目组 | 80h |
| 416 | 9.16 | 全面推广与运行跟踪 | manual | 18.18d | 2027-11-22 | 2027-12-24 | 415 | 信息化项目组 | 200h |
| 417 | 9.17 | 生产现场全面推广完成 | milestone, manual | 0d | 2027-12-27 | 2027-12-27 | 416 | 信息化项目组 |  |
| 418 | 9.18 | 数据治理常态化机制设计 | manual | 7.27d | 2027-12-28 | 2028-01-10 | 417 | 信息化项目组 | 80h |
| 419 | 9.19 | 月度数据质量审计机制运行 | manual | 7.27d | 2028-01-11 | 2028-01-24 | 418 | 信息化项目组 | 80h |
| 420 | 9.20 | 数据治理常态化机制验收 | milestone, manual | 0d | 2028-01-25 | 2028-01-25 | 419 | 信息化项目组 |  |

Notes:
- 351: 自动生成父级摘要，用于修复 WBS 树结构
- 352: MES一期范围；QMS作为MES建设下子项目，2027上半年完成基础能力
- 353: MES一期范围；QMS作为MES建设下子项目，2027上半年完成基础能力
- 354: MES一期范围；QMS作为MES建设下子项目，2027上半年完成基础能力
- 355: MES一期范围；QMS作为MES建设下子项目，2027上半年完成基础能力
- 356: MES一期范围；QMS作为MES建设下子项目，2027上半年完成基础能力
- 357: 自动生成父级摘要，用于修复 WBS 树结构
- 358: MES一期范围；QMS作为MES建设下子项目，2027上半年完成基础能力
- 359: MES一期范围；QMS作为MES建设下子项目，2027上半年完成基础能力
- 360: MES一期范围；QMS作为MES建设下子项目，2027上半年完成基础能力
- 361: MES一期范围；QMS作为MES建设下子项目，2027上半年完成基础能力
- 362: MES一期范围；QMS作为MES建设下子项目，2027上半年完成基础能力
- 363: 自动生成父级摘要，用于修复 WBS 树结构
- 364: MES一期范围；QMS作为MES建设下子项目，2027上半年完成基础能力
- 365: MES一期范围；QMS作为MES建设下子项目，2027上半年完成基础能力
- 366: MES一期范围；QMS作为MES建设下子项目，2027上半年完成基础能力
- 367: MES一期范围；QMS作为MES建设下子项目，2027上半年完成基础能力
- 368: MES一期范围；QMS作为MES建设下子项目，2027上半年完成基础能力
- 369: 自动生成父级摘要，用于修复 WBS 树结构
- 370: MES一期范围；QMS作为MES建设下子项目，2027上半年完成基础能力
- 371: MES一期范围；QMS作为MES建设下子项目，2027上半年完成基础能力
- 372: MES一期范围；QMS作为MES建设下子项目，2027上半年完成基础能力
- 373: MES一期范围；QMS作为MES建设下子项目，2027上半年完成基础能力
- 374: MES一期范围；QMS作为MES建设下子项目，2027上半年完成基础能力
- 375: MES一期范围；QMS作为MES建设下子项目，2027上半年完成基础能力
- 376: 自动生成父级摘要，用于修复 WBS 树结构
- 377: MES一期范围；QMS作为MES建设下子项目，2027上半年完成基础能力
- 378: MES一期范围；QMS作为MES建设下子项目，2027上半年完成基础能力
- 379: MES一期范围；QMS作为MES建设下子项目，2027上半年完成基础能力
- 380: MES一期范围；QMS作为MES建设下子项目，2027上半年完成基础能力
- 381: MES一期范围；QMS作为MES建设下子项目，2027上半年完成基础能力
- 382: 自动生成父级摘要，用于修复 WBS 树结构
- 383: 关键节点前显式设置缓冲
- 384: 关键节点前显式设置缓冲
- 385: 关键节点前显式设置缓冲
- 386: 关键节点前显式设置缓冲
- 387: 关键节点前显式设置缓冲
- 388: 关键节点前显式设置缓冲
- 389: 关键节点前显式设置缓冲
- 390: 关键节点前显式设置缓冲
- 391: 跨系统联调、现场推广、数据治理常态化
- 392: WBS9必须条件驱动，不得日期驱动。
- 393: 9.0.8未通过前不得进入跨系统业务场景联调。
- 394: 9.0.8未通过前不得进入跨系统业务场景联调。
- 395: 9.0.8未通过前不得进入跨系统业务场景联调。
- 396: 9.0.8未通过前不得进入跨系统业务场景联调。
- 397: 9.0.8未通过前不得进入跨系统业务场景联调。
- 398: 9.0.8未通过前不得进入跨系统业务场景联调。
- 399: 9.0.8未通过前不得进入跨系统业务场景联调。
- 400: 9.0.8未通过前不得进入跨系统业务场景联调。
- 401: 按最终执行版统一口径：本期不使用MDM平台联调表述，改为主数据标准映射/一致性校验/规则接口校验。
- 402: 按最终执行版统一口径：本期不使用MDM平台联调表述，改为主数据标准映射/一致性校验/规则接口校验。
- 403: 按最终执行版统一口径：本期不使用MDM平台联调表述，改为主数据标准映射/一致性校验/规则接口校验。
- 404: 2027年重点：联调、常态化治理、生产现场推广
- 405: 2027年重点：联调、常态化治理、生产现场推广
- 406: 2027年重点：联调、常态化治理、生产现场推广
- 407: 2027年重点：联调、常态化治理、生产现场推广
- 408: 2027年重点：联调、常态化治理、生产现场推广
- 409: 2027年重点：联调、常态化治理、生产现场推广
- 410: 2027年重点：联调、常态化治理、生产现场推广
- 411: 2027年重点：联调、常态化治理、生产现场推广
- 412: 2027年重点：联调、常态化治理、生产现场推广
- 413: 2027年重点：联调、常态化治理、生产现场推广
- 414: 2027年重点：联调、常态化治理、生产现场推广
- 415: 2027年重点：联调、常态化治理、生产现场推广
- 416: 2027年重点：联调、常态化治理、生产现场推广
- 417: 2027年重点：联调、常态化治理、生产现场推广
- 418: 2027年重点：联调、常态化治理、生产现场推广
- 419: 2027年重点：联调、常态化治理、生产现场推广
- 420: 2027年重点：联调、常态化治理、生产现场推广

| ID | WBS | Task | Type | Duration | Start | Finish | Predecessors | Resources | Work |
| --- | --- | --- | --- | --- | --- | --- | --- | --- | --- |
| 421 | 10 | AI应用深化、驾驶舱与总体验收 | manual | 142.55d | 2027-05-03 | 2028-01-31 |  | 信息化项目组 | 1568h |
| 422 | 10.1 | 项目文档知识库深化 | manual | 10.91d | 2027-05-03 | 2027-05-21 |  | 信息化项目组 | 120h |
| 423 | 10.2 | 代码库问答与审查助手试点 | manual | 10.91d | 2027-05-24 | 2027-06-11 | 422 | 信息化项目组 | 120h |
| 424 | 10.3 | 测试用例生成试点 | manual | 7.27d | 2027-06-14 | 2027-06-25 | 423 | 信息化项目组 | 80h |
| 425 | 10.4 | 项目周报/风险台账自动生成试点 | manual | 7.27d | 2027-06-28 | 2027-07-09 | 424 | 信息化项目组 | 80h |
| 426 | 10.5 | 数字员工场景筛选 | manual | 5.82d | 2027-07-12 | 2027-07-21 | 425 | 信息化项目组 | 64h |
| 427 | 10.6 | 数字员工低风险场景原型 | manual | 14.55d | 2027-07-22 | 2027-08-18 | 426 | 信息化项目组 | 160h |
| 428 | 10.7 | 数字员工试点运行 | manual | 14.55d | 2027-08-19 | 2027-09-15 | 427 | 信息化项目组 | 160h |
| 429 | 10.8 | AI应用/数字员工试点完成 | milestone, manual | 0d | 2027-09-16 | 2027-09-16 | 428 | 信息化项目组 |  |
| 430 | 10.9 | 驾驶舱指标体系深化 | manual | 7.27d | 2027-09-17 | 2027-09-30 | 429 | 信息化项目组 | 80h |
| 431 | 10.10 | 驾驶舱数据接入与看板深化 | manual | 14.55d | 2027-10-01 | 2027-10-28 | 430 | 信息化项目组 | 160h |
| 432 | 10.11 | 项目总体验收材料准备 | manual | 10.91d | 2028-01-03 | 2028-01-21 | 431 | 信息化项目组 | 120h |
| 433 | 10.12 | 项目总体验收前风险缓冲 | manual | 3.64d | 2028-01-24 | 2028-01-28 | 432 | 信息化项目组 | 40h |
| 434 | 10.13 | 项目总体验收 | milestone, manual | 0d | 2028-01-31 | 2028-01-31 | 433, 420 | 信息化项目组 |  |

Notes:
- 421: 2027年深化数字员工、知识库、驾驶舱，2028年1月底总体验收
- 422: 2026先支撑数据治理沉淀和知识库，2027深化数字员工
- 423: 2026先支撑数据治理沉淀和知识库，2027深化数字员工
- 424: 2026先支撑数据治理沉淀和知识库，2027深化数字员工
- 425: 2026先支撑数据治理沉淀和知识库，2027深化数字员工
- 426: 2026先支撑数据治理沉淀和知识库，2027深化数字员工
- 427: 2026先支撑数据治理沉淀和知识库，2027深化数字员工
- 428: 2026先支撑数据治理沉淀和知识库，2027深化数字员工
- 429: 2026先支撑数据治理沉淀和知识库，2027深化数字员工
- 430: 2026先支撑数据治理沉淀和知识库，2027深化数字员工
- 431: 2026先支撑数据治理沉淀和知识库，2027深化数字员工
- 432: 2026先支撑数据治理沉淀和知识库，2027深化数字员工
- 433: 2026先支撑数据治理沉淀和知识库，2027深化数字员工
- 434: 2026先支撑数据治理沉淀和知识库，2027深化数字员工
